# MAX - PEDIDO ASISTIDO

Schedule from MS Project, 2015-08-03 to 2016-09-01, status date 2016-09-09, costs in $, A marks actual dates.

## Calendars

- Standard: Mon-Fri 08:00-12:00, 13:00-17:00; Sat-Sun off. Exceptions (off unless hours are given): 2015-08-10 (Primer Grito de Independencia), 2015-10-09 (Independencia de Guayaquil), 2015-11-02 to 2015-11-03 (Día de Difuntos e Independencia de Cuenca), 2015-12-25 (Navidad), 2016-01-01 (Año nuevo).

## Resources

| Resource | Rate |
| --- | --- |
| RL3 | 1 |
| RL1 | 1 |
| RL2 | 1 |
| RL4 | 1 |

## Schedule

| ID | WBS | Task | Duration | Start | Finish | Predecessors | Complete | Remaining | Baseline start | Baseline finish | Baseline duration | Baseline 1 start | Baseline 1 finish | Total slack | Resources | Work | Actual work | Cost | Baseline cost | Actual cost |
| --- | --- | --- | --- | --- | --- | --- | --- | --- | --- | --- | --- | --- | --- | --- | --- | --- | --- | --- | --- | --- |
| 1 | 1 | **Pedido asistido** | 231d | 2015-08-03 A | 2016-06-28 |  | 99% | 3.3d | 2015-08-03 | 2016-03-01 | 146d | 2015-08-03 | 2016-06-28 | 47d |  | 3064h | 3020.8h | 3,064 | 1,600 | 3,020.8 |
| 2 | 1.1 | **Desarrollo** | 82d | 2015-08-03 A | 2015-11-30 A |  | 100% |  | 2015-08-03 | 2015-11-30 | 82d | 2015-08-03 | 2015-11-30 |  |  | 952h | 952h | 952 | 888 | 952 |
| 3 | 1.1.1 | **Pedido asistido** | 35d | 2015-08-03 A | 2015-09-21 A |  | 100% |  | 2015-08-03 | 2015-09-21 | 35d | 2015-08-03 | 2015-09-21 |  |  | 280h | 280h | 280 | 280 | 280 |
| 4 | 1.1.1.1 | Almacenamiento de artículos pedidos y revisados | 2d | 2015-08-03 A | 2015-08-04 A |  | 100% |  | 2015-08-03 | 2015-08-04 | 2d | 2015-08-03 | 2015-08-04 |  | RL3 | 16h | 16h | 16 | 16 | 16 |
| 5 | 1.1.1.2 | Consulta de artículos en base a clasificación | 2d | 2015-08-05 A | 2015-08-06 A | 4 | 100% |  | 2015-08-05 | 2015-08-06 | 2d | 2015-08-05 | 2015-08-06 |  | RL3 | 16h | 16h | 16 | 16 | 16 |
| 6 | 1.1.1.3 | Actualización de totales y cubicaje del listado de artículos | 2d | 2015-08-07 A | 2015-08-11 A | 5 | 100% |  | 2015-08-07 | 2015-08-11 | 2d | 2015-08-07 | 2015-08-11 |  | RL3 | 16h | 16h | 16 | 16 | 16 |
| 7 | 1.1.1.4 | Filtros de visualización de artículos | 3d | 2015-08-12 A | 2015-08-14 A | 6 | 100% |  | 2015-08-12 | 2015-08-14 | 3d | 2015-08-12 | 2015-08-14 |  | RL3 | 24h | 24h | 24 | 24 | 24 |
| 8 | 1.1.1.5 | Visualización de unidades de manejo adicionales del artículo | 2d | 2015-08-17 A | 2015-08-18 A | 7 | 100% |  | 2015-08-17 | 2015-08-18 | 2d | 2015-08-17 | 2015-08-18 |  | RL3 | 16h | 16h | 16 | 16 | 16 |
| 9 | 1.1.1.6 | Contador para hora de confirmación de pedido | 3d | 2015-08-19 A | 2015-08-21 A | 8 | 100% |  | 2015-08-19 | 2015-08-21 | 3d | 2015-08-19 | 2015-08-21 |  | RL3 | 24h | 24h | 24 | 24 | 24 |
| 10 | 1.1.1.7 | Selección de tipos de frecuencia de rotación en listado de artículos | 2d | 2015-08-24 A | 2015-08-25 A | 9 | 100% |  | 2015-08-24 | 2015-08-25 | 2d | 2015-08-24 | 2015-08-25 |  | RL3 | 16h | 16h | 16 | 16 | 16 |
| 11 | 1.1.1.8 | Validaciones de tipos de pedidos en creación | 3d | 2015-08-26 A | 2015-08-28 A | 10 | 100% |  | 2015-08-26 | 2015-08-28 | 3d | 2015-08-26 | 2015-08-28 |  | RL3 | 24h | 24h | 24 | 24 | 24 |
| 12 | 1.1.1.9 | Administración de acciones del listado de artículos | 3d | 2015-08-31 A | 2015-09-02 A | 11 | 100% |  | 2015-08-31 | 2015-09-02 | 3d | 2015-08-31 | 2015-09-02 |  | RL3 | 24h | 24h | 24 | 24 | 24 |
| 13 | 1.1.1.10 | Visualización de información adicional del artículo | 2d | 2015-09-03 A | 2015-09-04 A | 12 | 100% |  | 2015-09-03 | 2015-09-04 | 2d | 2015-09-03 | 2015-09-04 |  | RL3 | 16h | 16h | 16 | 16 | 16 |
| 14 | 1.1.1.11 | Consulta de existencias | 1d | 2015-09-07 A | 2015-09-07 A | 13 | 100% |  | 2015-09-07 | 2015-09-07 | 1d | 2015-09-07 | 2015-09-07 |  | RL3 | 8h | 8h | 8 | 8 | 8 |
| 15 | 1.1.1.12 | Consulta de rotación en ventas del local | 1d | 2015-09-08 A | 2015-09-08 A | 14 | 100% |  | 2015-09-08 | 2015-09-08 | 1d | 2015-09-08 | 2015-09-08 |  | RL3 | 8h | 8h | 8 | 8 | 8 |
| 16 | 1.1.1.13 | Actualización en línea de existencias | 2d | 2015-09-09 A | 2015-09-10 A | 15 | 100% |  | 2015-09-09 | 2015-09-10 | 2d | 2015-09-09 | 2015-09-10 |  | RL3 | 16h | 16h | 16 | 16 | 16 |
| 17 | 1.1.1.14 | Visualización y selección de artículos relacionados | 1d | 2015-09-11 A | 2015-09-11 A | 16 | 100% |  | 2015-09-11 | 2015-09-11 | 1d | 2015-09-11 | 2015-09-11 |  | RL3 | 8h | 8h | 8 | 8 | 8 |
| 18 | 1.1.1.15 | **Control cambios 18/09/2015** | 5d | 2015-09-14 A | 2015-09-18 A |  | 100% |  | 2015-09-14 | 2015-09-18 | 5d | 2015-09-14 | 2015-09-18 |  |  | 40h | 40h | 40 | 40 | 40 |
| 19 | 1.1.1.15.1 | Estilos filltros búsqueda | 3d | 2015-09-14 A | 2015-09-16 A | 17 | 100% |  | 2015-09-14 | 2015-09-16 | 3d | 2015-09-14 | 2015-09-16 |  | RL3 | 24h | 24h | 24 | 24 | 24 |
| 20 | 1.1.1.15.2 | Generación de archivos con angularJS | 2d | 2015-09-17 A | 2015-09-18 A | 19 | 100% |  | 2015-09-17 | 2015-09-18 | 2d | 2015-09-17 | 2015-09-18 |  | RL3 | 16h | 16h | 16 | 16 | 16 |
| 21 | 1.1.1.16 | Reunión de revisión de avance con el funcional | 1d | 2015-09-21 A | 2015-09-21 A | 18 | 100% |  | 2015-09-21 | 2015-09-21 | 1d | 2015-09-21 | 2015-09-21 |  | RL3 | 8h | 8h | 8 | 8 | 8 |
| 22 | 1.1.2 | **Pedido asistido por artículo** | 14d | 2015-09-22 A | 2015-10-12 A |  | 100% |  | 2015-09-22 | 2015-10-12 | 14d | 2015-09-22 | 2015-10-12 |  |  | 112h | 112h | 112 | 112 | 112 |
| 23 | 1.1.2.1 | Listado de artículos añadidos | 4d | 2015-09-22 A | 2015-09-25 A | 21 | 100% |  | 2015-09-22 | 2015-09-25 | 4d | 2015-09-22 | 2015-09-25 |  | RL3 | 32h | 32h | 32 | 32 | 32 |
| 24 | 1.1.2.2 | Búsqueda de artículos simple y avanzada | 4d | 2015-09-28 A | 2015-10-01 A | 23 | 100% |  | 2015-09-28 | 2015-10-01 | 4d | 2015-09-28 | 2015-10-01 |  | RL3 | 32h | 32h | 32 | 32 | 32 |
| 25 | 1.1.2.3 | Almacenamiento de artículos pedidos y revisados | 2d | 2015-10-02 A | 2015-10-05 A | 24 | 100% |  | 2015-10-02 | 2015-10-05 | 2d | 2015-10-02 | 2015-10-05 |  | RL3 | 16h | 16h | 16 | 16 | 16 |
| 26 | 1.1.2.4 | Consulta de existencias | 2d | 2015-10-06 A | 2015-10-07 A | 25 | 100% |  | 2015-10-06 | 2015-10-07 | 2d | 2015-10-06 | 2015-10-07 |  | RL3 | 16h | 16h | 16 | 16 | 16 |
| 27 | 1.1.2.5 | Actualización en línea de existencias | 2d | 2015-10-08 A | 2015-10-12 A | 26 | 100% |  | 2015-10-08 | 2015-10-12 | 2d | 2015-10-08 | 2015-10-12 |  | RL3 | 16h | 16h | 16 | 16 | 16 |
| 28 | 1.1.3 | Reunión de revisión de avance con el funcional | 1d | 2015-10-13 A | 2015-10-13 A | 27 | 100% |  | 2015-10-13 | 2015-10-13 | 1d | 2015-10-13 | 2015-10-13 |  | RL3 | 8h | 8h | 8 | 8 | 8 |

Notes:
- 3: * ·;; ·;; Pedido asistidos / ·Siempre valida las clasificaciones que le pertenece. / 1El primer usuario que ingrese a crear el pedido define la fecha del pedido, ya que solo se puede realizar un pedido para una fecha. / 2Puede hacerlo por una clasificación, subbodega, pasillo, tipo, orden, tipo artículo (nuevo [ingresado hace dos días], promoción, próxima promoción, temporada, alcance), tipo ingreso (producto en stand by, pedido, aceptado el sugerido), proveedor, opción (ingreso, consulta) y fecha del pedido. / 3Cuando es un administrador y no es un local de apertura, se exige el ingreso de la clasificación. / 4Siempre lista los artículos validando el alcance, la clase y si tiene existencia en el CD (si no tiene existencia no se lista, y si no es una bodega de tránsito [no es perecible por ejempo]). / 5Ya en el listado, se visualiza la rotación de ventas con un intervalo dependiendo de la subbodega (semanal, mensual, etc.), la existencia en el CD, existencia en el local, promedio de rotación, cantidad sugerida y unidad de manejo. / 6El producto con anomalía se marca para indentificar si se pidió el artículo pero no ha llegado. / 7Al listar los artículos verifica si el producto está en tarea (amarillo) o ya despachado (blanco). / 8Al cambiar de página ya se descuenta el stock del CD, la reservación de la mercadería debe ser lo más rápido. / 9Existe un parámetro para el límite de unidades de un artículo que se puede pedir. / 10El confirmar el pedido solo es un estado que me permite identificar si la persona encargada del pedido revisó todos los artículos. / 11Si el pedido no se puede transmitir debido a que no todos los usuarios confirmaron sus pedidos, a pesar de eso, el sistema procesa el pedido y genera los despachos, pero marca al local para identificarlo que no cumplió la tarea completa. / 12Se almacena la cantidad pedida, en el caso de hacer la reserva y no había existencia, si durante el día cargan la existencia en el local, igual se despacha lo pedido. / 13Los pedidos solo se pueden crear con fecha del día de hoy y hasta tres días (parámetro) hacia adelante. No puede modificar pedidos anteriores al día actual. / 14Ciertos locales (parametrizados) pueden realizar varios pedidos (dos veces al día) a la misma bodega (calendarizado de esa manera). Si un local no está autorizado, para poder realizar un pedido adicional, tiene que ser autorizado por la subbodega a la que desea pedir mercadería. / 15La rotación de ventas que se visualiza en los detalles corresponde al día en el que le entregarán la mercadería, por lo que se presentará 6 días hacia atrás (en perfumería 6 meses atrás, la rotación se parametriza por subbodega). / 16Para la cantidad sugerida se calcula en base al promedio de la rotación presentada, solo en el caso de ropa se presenta en base a las ventas del día anterior. / 17Se debe listar los artículos relacionados agrupados. / 18Se debería manejar diferentes tipos de pedidos: / ·Normal (pedido diario) / 1Adicional (pedido adicional pero con parametrización previa) / 2Extraordinario (pedido adicional pero con autorización de la bodega). / Se debería diferenciar de alguna manera llamativa el pedido normal.
- 22: Pedido asistidos por artículo / ·Opción exclusiva del administrador. / ·Siempre que se añada un artículo, se lo hace sobre el mismo pedido activo. (Actualmente se tiene activo uno por subbodega) / ·Ingresa artículo por artículo, la pantalla es similar a la anterior. / ·Al buscar el ítem, se debe validar que pertenezca a la subbodega que se seleccionó anteriormente, así como alcances. Además al buscar le debe aparecer en la barra de búsqueda la existencia del CD, existencia del local y el valor sugerido. / ·Si el artículo ya fue pedido anteriormente, se carga la cantidad ya pedida en el resultado de la búsqueda. / ·Se debe listar los artículos relacionados.

| ID | WBS | Task | Duration | Start | Finish | Predecessors | Complete | Baseline start | Baseline finish | Baseline duration | Baseline 1 start | Baseline 1 finish | Constraint | Resources | Work | Actual work | Cost | Baseline cost | Actual cost |
| --- | --- | --- | --- | --- | --- | --- | --- | --- | --- | --- | --- | --- | --- | --- | --- | --- | --- | --- | --- |
| 29 | 1.1.4 | **Pedido asistido por escaner** | 4d | 2015-09-24 A | 2015-09-29 A |  | 100% | 2015-09-24 | 2015-09-29 | 4d | 2015-09-24 | 2015-09-29 |  |  | 32h | 32h | 32 | 32 | 32 |
| 30 | 1.1.4.1 | Consulta de existencias | 2d | 2015-09-24 A | 2015-09-25 A |  | 100% | 2015-09-24 | 2015-09-25 | 2d | 2015-09-24 | 2015-09-25 | start no earlier than 2015-09-24 | RL2 | 16h | 16h | 16 | 16 | 16 |
| 31 | 1.1.4.2 | Actualización en línea de existencias | 2d | 2015-09-28 A | 2015-09-29 A | 30 | 100% | 2015-09-28 | 2015-09-29 | 2d | 2015-09-28 | 2015-09-29 |  | RL2 | 16h | 16h | 16 | 16 | 16 |
| 32 | 1.1.5 | Reunión de revisión de avance con el funcional | 1d | 2015-09-30 A | 2015-09-30 A | 31 | 100% | 2015-09-30 | 2015-09-30 | 1d | 2015-09-30 | 2015-09-30 |  | RL2 | 8h | 8h | 8 | 8 | 8 |
| 33 | 1.1.6 | **Asignación de clasificaciones a usuarios** | 11d | 2015-08-24 A | 2015-09-07 A |  | 100% | 2015-08-24 | 2015-09-07 | 11d | 2015-08-24 | 2015-09-07 |  |  | 88h | 88h | 88 | 88 | 88 |
| 34 | 1.1.6.1 | Estilos CSS a pantalla principal | 4d | 2015-08-24 A | 2015-08-27 A |  | 100% | 2015-08-24 | 2015-08-27 | 4d | 2015-08-24 | 2015-08-27 | start no earlier than 2015-08-24 | RL4 | 32h | 32h | 32 | 32 | 32 |
| 35 | 1.1.6.2 | Componente Fieldset | 2d | 2015-08-28 A | 2015-08-31 A | 34 | 100% | 2015-08-28 | 2015-08-31 | 2d | 2015-08-28 | 2015-08-31 |  | RL4 | 16h | 16h | 16 | 16 | 16 |
| 36 | 1.1.6.3 | Cambio en estructura del proyecto | 5d | 2015-09-01 A | 2015-09-07 A | 35 | 100% | 2015-09-01 | 2015-09-07 | 5d | 2015-09-01 | 2015-09-07 |  | RL4 | 40h | 40h | 40 | 40 | 40 |
| 37 | 1.1.7 | **Monitoreo pedido asistido** | 8d | 2015-09-30 A | 2015-10-12 A |  | 100% | 2015-09-30 | 2015-10-12 | 8d | 2015-09-30 | 2015-10-12 |  |  | 104h | 104h | 104 | 104 | 104 |
| 38 | 1.1.7.1 | Listado de artículos a pedir | 6d | 2015-09-30 A | 2015-10-07 A |  | 100% | 2015-09-30 | 2015-10-07 | 6d | 2015-09-30 | 2015-10-07 | start no earlier than 2015-09-30 | RL1 | 48h | 48h | 48 | 48 | 48 |
| 39 | 1.1.7.2 | Almacenamiento de artículos pedidos y revisados | 2d | 2015-10-01 A | 2015-10-02 A | 32 | 100% | 2015-10-01 | 2015-10-02 | 2d | 2015-10-01 | 2015-10-02 |  | RL2 | 16h | 16h | 16 | 16 | 16 |
| 40 | 1.1.7.3 | Consulta de existencias | 2d | 2015-10-05 A | 2015-10-06 A | 39 | 100% | 2015-10-05 | 2015-10-06 | 2d | 2015-10-05 | 2015-10-06 |  | RL2 | 16h | 16h | 16 | 16 | 16 |
| 41 | 1.1.7.4 | Actualización en línea de existencias | 3d | 2015-10-07 A | 2015-10-12 A | 40 | 100% | 2015-10-07 | 2015-10-12 | 3d | 2015-10-07 | 2015-10-12 |  | RL2 | 24h | 24h | 24 | 24 | 24 |
| 42 | 1.1.8 | Reunión de revisión de avance con el funcional | 1d | 2015-10-14 A | 2015-10-14 A | 28 | 100% | 2015-10-14 | 2015-10-14 | 1d | 2015-10-14 | 2015-10-14 |  | RL3 | 8h | 8h | 8 | 8 | 8 |
| 43 | 1.1.9 | Preparación scripts | 1d | 2015-10-15 A | 2015-10-15 A | 42 | 100% | 2015-10-15 | 2015-10-15 | 1d | 2015-10-15 | 2015-10-15 |  | RL3 | 8h | 8h | 8 | 8 | 8 |
| 44 | 1.1.10 | Integración con el CONTEXTO de la aplicación MAX | 4d | 2015-10-08 A | 2015-10-14 A | 38, 40 | 100% | 2015-10-08 | 2015-10-14 | 4d | 2015-10-08 | 2015-10-14 |  | RL1; RL2 | 64h | 64h | 64 |  | 64 |
| 45 | 1.1.11 | **Control cambios - Revisión funcional-Módulo Asiganción clasificación usuarios** | 23d | 2015-10-16 A | 2015-11-19 A |  | 100% | 2015-10-16 | 2015-11-19 | 23d | 2015-10-16 | 2015-11-19 |  |  | 184h | 184h | 184 | 184 | 184 |
| 46 | 1.1.11.1 | Modificación estilos revisión | 5d | 2015-10-16 A | 2015-10-22 A | 43 | 100% | 2015-10-16 | 2015-10-22 | 5d | 2015-10-16 | 2015-10-22 |  | RL3 | 40h | 40h | 40 | 40 | 40 |
| 47 | 1.1.11.2 | **Opción Asignación usuarios** | 6d | 2015-10-23 A | 2015-10-30 A |  | 100% | 2015-10-23 | 2015-10-30 | 6d | 2015-10-23 | 2015-10-30 |  |  | 48h | 48h | 48 | 48 | 48 |
| 48 | 1.1.11.2.1 | Modificar estructura | 2d | 2015-10-23 A | 2015-10-26 A | 46 | 100% | 2015-10-23 | 2015-10-26 | 2d | 2015-10-23 | 2015-10-26 |  | RL3 | 16h | 16h | 16 | 16 | 16 |
| 49 | 1.1.11.2.2 | Modificar estilos | 3d | 2015-10-27 A | 2015-10-29 A | 48 | 100% | 2015-10-27 | 2015-10-29 | 3d | 2015-10-27 | 2015-10-29 |  | RL3 | 24h | 24h | 24 | 24 | 24 |
| 50 | 1.1.11.2.3 | Pruebas | 1d | 2015-10-30 A | 2015-10-30 A | 49 | 100% | 2015-10-30 | 2015-10-30 | 1d | 2015-10-30 | 2015-10-30 |  | RL3 | 8h | 8h | 8 | 8 | 8 |
| 51 | 1.1.11.3 | **Opción Intercambio** | 6d | 2015-11-04 A | 2015-11-11 A |  | 100% | 2015-11-04 | 2015-11-11 | 6d | 2015-11-04 | 2015-11-11 |  |  | 48h | 48h | 48 | 48 | 48 |
| 52 | 1.1.11.3.1 | Modificar estructura | 2d | 2015-11-04 A | 2015-11-05 A | 50 | 100% | 2015-11-04 | 2015-11-05 | 2d | 2015-11-04 | 2015-11-05 |  | RL3 | 16h | 16h | 16 | 16 | 16 |
| 53 | 1.1.11.3.2 | Modificar estilos | 3d | 2015-11-06 A | 2015-11-10 A | 52 | 100% | 2015-11-06 | 2015-11-10 | 3d | 2015-11-06 | 2015-11-10 |  | RL3 | 24h | 24h | 24 | 24 | 24 |
| 54 | 1.1.11.3.3 | Pruebas | 1d | 2015-11-11 A | 2015-11-11 A | 53 | 100% | 2015-11-11 | 2015-11-11 | 1d | 2015-11-11 | 2015-11-11 |  | RL3 | 8h | 8h | 8 | 8 | 8 |

Notes:
- 29: * ·;; ·;; Pedido asistido por escáner / ·Ingresa la subbodega, pasillo y lado. Posteriormente ingresa las fechas./ 1Se escanea el artículo y se ingresa la cantidad./ 2Una vez ingresado el primer artículo se puede acceder a una opción de asistido que lista artículos dependiendo de los siguientes parámetros:/ ·Artículos del proveedor del artículo ingresado anteriormente./ 1Clasificación del artículo ingresado con o sin productos importados/ ·A los usuarios comodin (ps) no se restringe por clasificación. Solo se le asigna una subbodega. A los usuarios propios del local si se restringe por clasificación. / 1Los datos listados serían descripción, unidad de manejo, existencia del CD y sugerido. / 2A diferencia de los otros ingresos, actualmente al momento de guardar, ya se guarda en estado confirmado el ingreso.

| ID | WBS | Task | Duration | Start | Finish | Predecessors | Complete | Baseline start | Baseline finish | Baseline duration | Baseline 1 start | Baseline 1 finish | Resources | Work | Actual work | Cost | Baseline cost | Actual cost |
| --- | --- | --- | --- | --- | --- | --- | --- | --- | --- | --- | --- | --- | --- | --- | --- | --- | --- | --- |
| 55 | 1.1.11.4 | **Opción Reportes** | 6d | 2015-11-12 A | 2015-11-19 A |  | 100% | 2015-11-12 | 2015-11-19 | 6d | 2015-11-12 | 2015-11-19 |  | 48h | 48h | 48 | 48 | 48 |
| 56 | 1.1.11.4.1 | Modificar estructura | 2d | 2015-11-12 A | 2015-11-13 A | 54 | 100% | 2015-11-12 | 2015-11-13 | 2d | 2015-11-12 | 2015-11-13 | RL3 | 16h | 16h | 16 | 16 | 16 |
| 57 | 1.1.11.4.2 | Modificar estilos | 3d | 2015-11-16 A | 2015-11-18 A | 56 | 100% | 2015-11-16 | 2015-11-18 | 3d | 2015-11-16 | 2015-11-18 | RL3 | 24h | 24h | 24 | 24 | 24 |
| 58 | 1.1.11.4.3 | Pruebas | 1d | 2015-11-19 A | 2015-11-19 A | 57 | 100% | 2015-11-19 | 2015-11-19 | 1d | 2015-11-19 | 2015-11-19 | RL3 | 8h | 8h | 8 | 8 | 8 |
| 59 | 1.1.12 | **Control de cambios - Sugerencias INNOVA** | 7d | 2015-11-20 A | 2015-11-30 A |  | 100% | 2015-11-20 | 2015-11-30 | 7d | 2015-11-20 | 2015-11-30 |  | 56h | 56h | 56 | 56 | 56 |
| 60 | 1.1.12.1 | Alerta para productos que no han tenido rotación | 1d | 2015-11-20 A | 2015-11-20 A | 45 | 100% | 2015-11-20 | 2015-11-20 | 1d | 2015-11-20 | 2015-11-20 | RL3 | 8h | 8h | 8 | 8 | 8 |
| 61 | 1.1.12.2 | Identificar productos de la cuponera con otro color | 2d | 2015-11-23 A | 2015-11-24 A | 60 | 100% | 2015-11-23 | 2015-11-24 | 2d | 2015-11-23 | 2015-11-24 | RL3 | 16h | 16h | 16 | 16 | 16 |
| 62 | 1.1.12.3 | Alerta para productos que no se piden (10 días) | 2d | 2015-11-25 A | 2015-11-26 A | 61 | 100% | 2015-11-25 | 2015-11-26 | 2d | 2015-11-25 | 2015-11-26 | RL3 | 16h | 16h | 16 | 16 | 16 |
| 63 | 1.1.12.4 | Colocar la letra <<I>> de interproveedor | 1d | 2015-11-27 A | 2015-11-27 A | 62 | 100% | 2015-11-27 | 2015-11-27 | 1d | 2015-11-27 | 2015-11-27 | RL3 | 8h | 8h | 8 | 8 | 8 |
| 64 | 1.1.12.5 | Bloquear el pedido de productos que tienen los siguientes problemas: registro sanitario caducado, precio afiliado mayor al PVP | 1d | 2015-11-30 A | 2015-11-30 A | 63 | 100% | 2015-11-30 | 2015-11-30 | 1d | 2015-11-30 | 2015-11-30 | RL3 | 8h | 8h | 8 | 8 | 8 |
| 65 | 1.2 | **Pruebas en desarrollo** | 35d | 2015-10-15 A | 2015-12-04 A |  | 100% | 2015-10-15 | 2015-12-04 | 35d | 2015-10-15 | 2015-12-04 |  | 48h | 48h | 48 | 48 | 48 |
| 66 | 1.2.1 | Pruebas de desarrollo | 4d | 2015-12-01 A | 2015-12-04 A | 59 | 100% | 2015-12-01 | 2015-12-04 | 4d | 2015-12-01 | 2015-12-04 | RL3 | 32h | 32h | 32 | 32 | 32 |
| 67 | 1.2.2 | Pruebas Líder Proyecto | 1d | 2015-10-15 A | 2015-10-15 A | 44 | 100% | 2015-10-15 | 2015-10-15 | 1d | 2015-10-15 | 2015-10-15 | RL1 | 8h | 8h | 8 | 8 | 8 |
| 68 | 1.2.3 | Pruebas Carga | 1d | 2015-10-15 A | 2015-10-15 A | 44 | 100% | 2015-10-15 | 2015-10-15 | 1d | 2015-10-15 | 2015-10-15 | RL2 | 8h | 8h | 8 | 8 | 8 |
| 69 | 1.3 | **Pruebas de control calidad** | 9d | 2015-12-07 A | 2015-12-17 A |  | 100% | 2015-12-07 | 2015-12-17 | 9d | 2015-12-07 | 2015-12-17 |  | 200h | 200h | 200 | 8 | 200 |
| 70 | 1.3.1 | Capacitación | 1d | 2015-12-07 A | 2015-12-07 A | 66 | 100% | 2015-12-07 | 2015-12-07 | 1d | 2015-12-07 | 2015-12-07 | RL1 | 8h | 8h | 8 | 8 | 8 |
| 71 | 1.3.2 | Corrección observaciones de pruebas | 3d | 2015-12-08 A | 2015-12-10 A | 70 | 100% | 2015-12-08 | 2015-12-10 | 3d | 2015-12-08 | 2015-12-10 | RL3; RL2; RL1 | 72h | 72h | 72 |  | 72 |
| 72 | 1.3.3 | Pruebas en sitio | 3d | 2015-12-11 A | 2015-12-15 A | 71 | 100% | 2015-12-11 | 2015-12-15 | 3d | 2015-12-11 | 2015-12-15 | RL3; RL2; RL1 | 72h | 72h | 72 |  | 72 |
| 73 | 1.3.4 | Correcciones pruebas en sitio | 2d | 2015-12-16 A | 2015-12-17 A | 72 | 100% | 2015-12-16 | 2015-12-17 | 2d | 2015-12-16 | 2015-12-17 | RL3; RL2; RL1 | 48h | 48h | 48 |  | 48 |
| 74 | 1.4 | **Control de cambios - Revisión cambios** | 18d | 2015-12-18 A | 2016-01-14 A |  | 100% | 2015-12-18 | 2016-01-14 | 18d | 2015-12-18 | 2016-01-14 |  | 152h | 152h | 152 | 152 | 152 |
| 75 | 1.4.1 | Modificar estilos en listado de artículos y la alerta de artículos sin rotación debe ser titilando el borde de la fila correspondiente | 2d | 2015-12-18 A | 2015-12-21 A | 73 | 100% | 2015-12-18 | 2015-12-21 | 2d | 2015-12-18 | 2015-12-21 | RL3 | 16h | 16h | 16 | 16 | 16 |
| 76 | 1.4.2 | Cambiar el ícono que genera interface por uno que represente envío de archivos | 1d | 2015-12-18 A | 2015-12-18 A | 73 | 100% | 2015-12-18 | 2015-12-18 | 1d | 2015-12-18 | 2015-12-18 | RL1 | 8h | 8h | 8 | 8 | 8 |
| 77 | 1.4.3 | Opción por perfil para que el administrador de locales especifique que no va a realizar el pedido configurado. | 1d | 2015-12-22 A | 2015-12-22 A | 75 | 100% | 2015-12-22 | 2015-12-22 | 1d | 2015-12-22 | 2015-12-22 | RL3 | 8h | 8h | 8 | 8 | 8 |
| 78 | 1.4.4 | Mover el filtro de búsqueda de locales para que esté después del filtro de subbodega en intreface. | 1d | 2015-12-21 A | 2015-12-21 A | 76 | 100% | 2015-12-21 | 2015-12-21 | 1d | 2015-12-21 | 2015-12-21 | RL1 | 8h | 8h | 8 | 8 | 8 |
| 79 | 1.4.5 | Validación de pedido extra en base a pedido del día de ayer o flag de no pedir | 2d | 2015-12-23 A | 2015-12-24 A | 77 | 100% | 2015-12-23 | 2015-12-24 | 2d | 2015-12-23 | 2015-12-24 | RL3 | 16h | 16h | 16 | 16 | 16 |
| 80 | 1.4.6 | En el monitoreo presentar la información por defecto del usuario en los filtros de búsqueda de: CD. BODEGA, y visualizar los pedidos correspondientes | 4d | 2015-12-28 A | 2015-12-31 A | 79 | 100% | 2015-12-28 | 2015-12-31 | 4d | 2015-12-28 | 2015-12-31 | RL3 | 16h | 16h | 16 | 16 | 16 |
| 81 | 1.4.7 | Maximizar el tipo de letra y cambiar el color del header del listado de pedidos en el monitoreo | 2d | 2015-12-22 A | 2015-12-23 A | 78 | 100% | 2015-12-22 | 2015-12-23 | 2d | 2015-12-22 | 2015-12-23 | RL1 | 8h | 8h | 8 | 8 | 8 |
| 82 | 1.4.8 | En monitoreo visualizar los locales por sub bidega que no han pedido el día de ayer | 4d | 2015-12-24 A | 2015-12-30 A | 81 | 100% | 2015-12-24 | 2015-12-30 | 4d | 2015-12-24 | 2015-12-30 | RL1 | 16h | 16h | 16 | 16 | 16 |
| 83 | 1.4.9 | La autorización de pedido extra se la debe realizar por el CELULAR. | 10d | 2015-12-31 A | 2016-01-14 A | 82 | 100% | 2015-12-31 | 2016-01-14 | 10d | 2015-12-31 | 2016-01-14 | RL1 | 56h | 56h | 56 | 56 | 56 |

| ID | WBS | Task | Duration | Start | Finish | Predecessors | Complete | Baseline start | Baseline finish | Baseline duration | Baseline 1 start | Baseline 1 finish | Resources | Work | Actual work | Cost | Baseline cost | Actual cost |
| --- | --- | --- | --- | --- | --- | --- | --- | --- | --- | --- | --- | --- | --- | --- | --- | --- | --- | --- |
| 84 | 1.5 | **Control de cambios - Revisión INNOVA** | 14d | 2016-01-15 A | 2016-02-03 A |  | 100% | 2016-01-15 | 2016-02-03 | 14d | 2016-01-15 | 2016-02-03 |  | 144h | 144h | 144 | 144 | 144 |
| 85 | 1.5.1 | Habilitar opción de pedido asistido por artículo para usuarios con perfil de jefe de percha | 1d | 2016-01-15 A | 2016-01-15 A | 83 | 100% | 2016-01-15 | 2016-01-15 | 1d | 2016-01-15 | 2016-01-15 | RL3 | 8h | 8h | 8 | 8 | 8 |
| 86 | 1.5.2 | Enviar email de notificación de pedido suspendido a jefe de bodega | 2d | 2016-01-18 A | 2016-01-19 A | 85 | 100% | 2016-01-18 | 2016-01-19 | 2d | 2016-01-18 | 2016-01-19 | RL3 | 16h | 16h | 16 | 16 | 16 |
| 87 | 1.5.3 | **Artículos TOP en monitoreo** | 11d | 2016-01-20 A | 2016-02-03 A |  | 100% | 2016-01-20 | 2016-02-03 | 11d | 2016-01-20 | 2016-02-03 |  | 88h | 88h | 88 | 88 | 88 |
| 88 | 1.5.3.1 | Al momento de confirmar el pedido por el administrador desplegar un listado de artículos cuyas cantidades sobrepasen una determinada cantidad | 3d | 2016-01-20 A | 2016-01-22 A | 86 | 100% | 2016-01-20 | 2016-01-22 | 3d | 2016-01-20 | 2016-01-22 | RL1 | 24h | 24h | 24 | 24 | 24 |
| 89 | 1.5.3.2 | Acciones confirmar, corregir | 3d | 2016-01-25 A | 2016-01-27 A | 88 | 100% | 2016-01-25 | 2016-01-27 | 3d | 2016-01-25 | 2016-01-27 | RL1 | 24h | 24h | 24 | 24 | 24 |
| 90 | 1.5.3.3 | Editar cantidades pedidas de atrículos TOP | 5d | 2016-01-28 A | 2016-02-03 A | 89 | 100% | 2016-01-28 | 2016-02-03 | 5d | 2016-01-28 | 2016-02-03 | RL1 | 40h | 40h | 40 | 40 | 40 |
| 91 | 1.5.4 | En listado de artículos para pedido general aumentar un filtro para artículos en promoción | 4d | 2016-01-20 A | 2016-01-25 A | 86 | 100% | 2016-01-20 | 2016-01-25 | 4d | 2016-01-20 | 2016-01-25 | RL3 | 32h | 32h | 32 | 32 | 32 |
| 92 | 1.6 | **Control de cambios - Reunión locales: 23/feb/2016** | 8d | 2016-01-26 A | 2016-02-04 A |  | 100% | 2016-01-26 | 2016-02-04 | 8d | 2016-01-26 | 2016-02-04 |  | 64h | 64h | 64 | 64 | 64 |
| 93 | 1.6.1 | Reporte de las clasificaciones no asignadas a un usuario | 2d | 2016-01-26 A | 2016-01-27 A | 91 | 100% | 2016-01-26 | 2016-01-27 | 2d | 2016-01-26 | 2016-01-27 | RL3 | 16h | 16h | 16 | 16 | 16 |
| 94 | 1.6.2 | La opción adelantar fecha del pedido crear como una funcionalidad. | 1d | 2016-01-28 A | 2016-01-28 A | 93 | 100% | 2016-01-28 | 2016-01-28 | 1d | 2016-01-28 | 2016-01-28 | RL3 | 8h | 8h | 8 | 8 | 8 |
| 95 | 1.6.3 | Presentar el número de clasificaciones que el usuario inactivó para no pedir en monitoreo | 1d | 2016-01-29 A | 2016-01-29 A | 94 | 100% | 2016-01-29 | 2016-01-29 | 1d | 2016-01-29 | 2016-01-29 | RL3 | 8h | 8h | 8 | 8 | 8 |
| 96 | 1.6.4 | En el filtro de bodegas añadir la opción: TODOS, para que puedan visualizar los pedidos de todas las bodegas | 2d | 2016-02-01 A | 2016-02-02 A | 95 | 100% | 2016-02-01 | 2016-02-02 | 2d | 2016-02-01 | 2016-02-02 | RL3 | 16h | 16h | 16 | 16 | 16 |
| 97 | 1.6.5 | Bloquear tecla F3 en listado de artículos y cambiar el color de la fila de las restantes unidades de manejo del artículo | 1d | 2016-02-03 A | 2016-02-03 A | 96 | 100% | 2016-02-03 | 2016-02-03 | 1d | 2016-02-03 | 2016-02-03 | RL3 | 8h | 8h | 8 | 8 | 8 |
| 98 | 1.6.6 | Incluir en el listado de pedidos el cubicaje de ocupación del furgón para cada pedido | 1d | 2016-02-04 A | 2016-02-04 A | 97 | 100% | 2016-02-04 | 2016-02-04 | 1d | 2016-02-04 | 2016-02-04 | RL3 | 8h | 8h | 8 | 8 | 8 |
| 99 | 1.7 | **Control de cambios - Reunión: 02/marz/2016** | 19d | 2016-02-04 A | 2016-03-01 A |  | 100% | 2016-02-04 | 2016-03-01 | 19d | 2016-02-04 | 2016-03-01 |  | 296h | 296h | 296 | 296 | 296 |
| 100 | 1.7.1 | **Autorización de usuarios** | 6d | 2016-02-04 A | 2016-02-11 A |  | 100% | 2016-02-04 | 2016-02-11 | 6d | 2016-02-04 | 2016-02-11 |  | 80h | 80h | 80 | 80 | 80 |
| 101 | 1.7.1.1 | Cambiar el formato del mensaje que indica que no existen datos debe ser un panel con fondo blanco borde celeste y el texto en el centro de color negro | 1d | 2016-02-04 A | 2016-02-04 A | 90 | 100% | 2016-02-04 | 2016-02-04 | 1d | 2016-02-04 | 2016-02-04 | RL1 | 8h | 8h | 8 | 8 | 8 |
| 102 | 1.7.1.2 | No visualizar los usuarios de los perfiles: administrador de local, despachador, caja, secretario, ayudante de percha en el listado de usuarios para asignar clasificaciones | 1d | 2016-02-05 A | 2016-02-05 A | 98 | 100% | 2016-02-05 | 2016-02-05 | 1d | 2016-02-05 | 2016-02-05 | RL3 | 8h | 8h | 8 | 8 | 8 |
| 103 | 1.7.1.3 | Cambiar el ícono que está alado de cada usuario por un visto de color verde si tiene asignado al menos una clasificación y por una X de color rojo si no tiene asignadas clasificaciones | 1d | 2016-02-05 A | 2016-02-05 A | 101 | 100% | 2016-02-05 | 2016-02-05 | 1d | 2016-02-05 | 2016-02-05 | RL1 | 8h | 8h | 8 | 8 | 8 |
| 104 | 1.7.1.4 | Buscar por CONTENGA en los filtros de código de barras y Descripción del artículo, esta opción no se debe visualizar. | 1d | 2016-02-08 A | 2016-02-08 A | 102 | 100% | 2016-02-08 | 2016-02-08 | 1d | 2016-02-08 | 2016-02-08 | RL3 | 8h | 8h | 8 | 8 | 8 |
| 105 | 1.7.1.5 | Eliminar la columna número del listado de artículos y visualizar el código de barras del mismo no el código interno | 1d | 2016-02-08 A | 2016-02-08 A | 103 | 100% | 2016-02-08 | 2016-02-08 | 1d | 2016-02-08 | 2016-02-08 | RL1 | 8h | 8h | 8 | 8 | 8 |
| 106 | 1.7.1.6 | Agregar filtro de búsqueda de usuarios sin clasificación, debe ubicarse debajo del filtro de búsqueda por nombre | 2d | 2016-02-09 A | 2016-02-10 A | 104 | 100% | 2016-02-09 | 2016-02-10 | 2d | 2016-02-09 | 2016-02-10 | RL3 | 16h | 16h | 16 | 16 | 16 |
| 107 | 1.7.1.7 | Cambiar estilos de los íconos de la pantalla de asignación de usuarios | 1d | 2016-02-09 A | 2016-02-09 A | 105 | 100% | 2016-02-09 | 2016-02-09 | 1d | 2016-02-09 | 2016-02-09 | RL1 | 8h | 8h | 8 | 8 | 8 |
| 108 | 1.7.1.8 | Validar los códigos de barra compuestos. | 1d | 2016-02-10 A | 2016-02-10 A | 107 | 100% | 2016-02-10 | 2016-02-10 | 1d | 2016-02-10 | 2016-02-10 | RL1 | 8h | 8h | 8 | 8 | 8 |
| 109 | 1.7.1.9 | Modificar mensajes y posiciones de labels, tooltips, filedset | 1d | 2016-02-11 A | 2016-02-11 A | 108 | 100% | 2016-02-11 | 2016-02-11 | 1d | 2016-02-11 | 2016-02-11 | RL1 | 8h | 8h | 8 | 8 | 8 |

| ID | WBS | Task | Duration | Start | Finish | Predecessors | Complete | Baseline start | Baseline finish | Baseline duration | Baseline 1 start | Baseline 1 finish | Resources | Work | Actual work | Cost | Baseline cost | Actual cost |
| --- | --- | --- | --- | --- | --- | --- | --- | --- | --- | --- | --- | --- | --- | --- | --- | --- | --- | --- |
| 110 | 1.7.2 | **Pedido asistido** | 14d | 2016-02-11 A | 2016-03-01 A |  | 100% | 2016-02-11 | 2016-03-01 | 14d | 2016-02-11 | 2016-03-01 |  | 216h | 216h | 216 | 216 | 216 |
| 111 | 1.7.2.1 | El listado de sub bodegas que se presenta debe ser solo el de las sub bodegas correspondientes a las clasificaciones asignadas al usuario logueado. A Los usuarios de los perfiles que no se configuran en autorización de usuarios se les debe presentar todas | 3d | 2016-02-11 A | 2016-02-15 A | 106 | 100% | 2016-02-11 | 2016-02-15 | 3d | 2016-02-11 | 2016-02-15 | RL3 | 24h | 24h | 24 | 24 | 24 |
| 112 | 1.7.2.2 | Crear tabla que contenga los tipos de pedido definidos con sus características y realizar las validaciones correspondientes | 3d | 2016-02-12 A | 2016-02-16 A | 109 | 100% | 2016-02-12 | 2016-02-16 | 3d | 2016-02-12 | 2016-02-16 | RL1 | 24h | 24h | 24 | 24 | 24 |
| 113 | 1.7.2.3 | Eliminar el botón (X) de la cabecera del panel de filtros; en su lugar para contraer el panel utilizar el ícono de jsf y colocarlo en la mitad de la página. | 1d | 2016-02-16 A | 2016-02-16 A | 111 | 100% | 2016-02-16 | 2016-02-16 | 1d | 2016-02-16 | 2016-02-16 | RL3 | 8h | 8h | 8 | 8 | 8 |
| 114 | 1.7.2.4 | Modificar la cabecera del reporte de los artículos en stand by | 1d | 2016-02-17 A | 2016-02-17 A | 112 | 100% | 2016-02-17 | 2016-02-17 | 1d | 2016-02-17 | 2016-02-17 | RL1 | 8h | 8h | 8 | 8 | 8 |
| 115 | 1.7.2.5 | Modificar navegación y mensajes iniciales para creación y selección de pedidos | 2d | 2016-02-17 A | 2016-02-18 A | 113 | 100% | 2016-02-17 | 2016-02-18 | 2d | 2016-02-17 | 2016-02-18 | RL3 | 16h | 16h | 16 | 16 | 16 |
| 116 | 1.7.2.6 | Al seleccionar un pedido (Check) se debe pintar un borde en la fila del mismo (Como en RNC). | 1d | 2016-02-18 A | 2016-02-18 A | 114 | 100% | 2016-02-18 | 2016-02-18 | 1d | 2016-02-18 | 2016-02-18 | RL1 | 8h | 8h | 8 | 8 | 8 |
| 117 | 1.7.2.7 | Colocar el cubicaje total de todos los pedidos visualizados en monitoreo | 1d | 2016-02-19 A | 2016-02-19 A | 116 | 100% | 2016-02-19 | 2016-02-19 | 1d | 2016-02-19 | 2016-02-19 | RL1 | 8h | 8h | 8 | 8 | 8 |
| 118 | 1.7.2.8 | En la pantalla de detalles de artículos del pedido, cuando se está modificando la cantidad pedida de un usuario también se debe modificar la cantidad pedida total del artículo que se está visualizando. | 1d | 2016-02-19 A | 2016-02-19 A | 115 | 100% | 2016-02-19 | 2016-02-19 | 1d | 2016-02-19 | 2016-02-19 | RL3 | 8h | 8h | 8 | 8 | 8 |
| 119 | 1.7.2.9 | Agregar botón para confirmar pedido de cada usuario colocarlo al lado de la columna estado del pedido | 4d | 2016-02-22 A | 2016-02-25 A | 117 | 100% | 2016-02-22 | 2016-02-23 | 2d | 2016-02-22 | 2016-02-25 | RL1 | 32h | 32h | 32 | 16 | 32 |
| 120 | 1.7.2.10 | Enviar email a responsable de la calendarización cuando se habilite el pedido. | 1d | 2016-02-22 A | 2016-02-22 A | 118 | 100% | 2016-02-22 | 2016-02-22 | 1d | 2016-02-22 | 2016-02-22 | RL3 | 8h | 8h | 8 | 8 | 8 |
| 121 | 1.7.2.11 | Modificar mensajes y posiciones de labels, tooltips, filedset | 3d | 2016-02-23 A | 2016-02-25 A | 120 | 100% | 2016-02-23 | 2016-02-24 | 2d | 2016-02-23 | 2016-02-25 | RL3 | 24h | 24h | 24 | 16 | 24 |
| 122 | 1.7.2.12 | Configurar listado de centros de distribución que se deben seleccionar | 3d | 2016-02-26 A | 2016-03-01 A | 119 | 100% | 2016-02-26 | 2016-02-26 | 1d | 2016-02-26 | 2016-03-01 | RL1 | 24h | 24h | 24 | 8 | 24 |
| 123 | 1.7.2.13 | Presentar furgón estándar por cada tipo para todos los locales | 3d | 2016-02-26 A | 2016-03-01 A | 121 | 100% | 2016-02-26 | 2016-02-26 | 1d | 2016-02-26 | 2016-03-01 | RL3 | 24h | 24h | 24 | 8 | 24 |
| 124 | 1.8 | **Control de cambios - Revisión centro de distribución: 08/abr/2016** | 7d | 2016-03-02 A | 2016-03-10 A |  | 100% |  |  |  | 2016-03-02 | 2016-03-10 |  | 96h | 96h | 96 |  | 96 |
| 125 | 1.8.1 | **Pedido asistido y por artículo** | 5d | 2016-03-02 A | 2016-03-08 A |  | 100% |  |  |  | 2016-03-02 | 2016-03-08 |  | 40h | 40h | 40 |  | 40 |
| 126 | 1.8.1.1 | Modificar consultas generales para no validar el centro de distribución y no visualizar filtro de centro de distribución | 1d | 2016-03-02 A | 2016-03-02 A | 122 | 100% |  |  |  | 2016-03-02 | 2016-03-02 | RL1 | 8h | 8h | 8 |  | 8 |
| 127 | 1.8.1.2 | Modificar validaciones de tipos de pedido y creación de los mismos para omitir el centro de distribución | 1d | 2016-03-03 A | 2016-03-03 A | 126 | 100% |  |  |  | 2016-03-03 | 2016-03-03 | RL1 | 8h | 8h | 8 |  | 8 |
| 128 | 1.8.1.3 | Consultar todos los datos del artículo relacionados a inventarios a través de los métodos desarrollados por SISPE Y ARTÍCULOS | 1d | 2016-03-04 A | 2016-03-04 A | 127 | 100% |  |  |  | 2016-03-04 | 2016-03-04 | RL1 | 8h | 8h | 8 |  | 8 |
| 129 | 1.8.1.4 | Almacenar en el detalle del pedido el centro de distribución al cuál se le consultó los datos del inventario y se le hizo la reserva | 2d | 2016-03-07 A | 2016-03-08 A | 128 | 100% |  |  |  | 2016-03-07 | 2016-03-08 | RL1 | 16h | 16h | 16 |  | 16 |
| 130 | 1.8.2 | **Monitoreo** | 3d | 2016-03-02 A | 2016-03-04 A |  | 100% |  |  |  | 2016-03-02 | 2016-03-04 |  | 24h | 24h | 24 |  | 24 |
| 131 | 1.8.2.1 | Modificar consultas generales para no validar el centro de distribución y no visualizar filtro de centro de distribución | 2d | 2016-03-02 A | 2016-03-03 A | 123 | 100% |  |  |  | 2016-03-02 | 2016-03-03 | RL3 | 16h | 16h | 16 |  | 16 |
| 132 | 1.8.2.2 | En la consulta de pedidos omitir el centro de distribución. La búsqueda se la debe realizar para todos los centros de distribución donde se encuentre configurada cada sub bodega seleccionada | 1d | 2016-03-04 A | 2016-03-04 A | 131 | 100% |  |  |  | 2016-03-04 | 2016-03-04 | RL3 | 8h | 8h | 8 |  | 8 |
| 133 | 1.8.3 | Los usuarios con el perfil jefe de percha pueden modificar las cantidades pedidas de los ayudantes asignados a el. | 1d | 2016-03-09 A | 2016-03-09 A | 129 | 100% | 2016-02-24 | 2016-02-25 | 2d | 2016-03-09 | 2016-03-09 | RL1 | 8h | 8h | 8 | 16 | 8 |
| 134 | 1.8.4 | Visualizar la cantidad de despacho de un artículo | 1d | 2016-03-07 A | 2016-03-07 A | 132 | 100% | 2016-02-25 | 2016-02-25 | 1d | 2016-03-07 | 2016-03-07 | RL3 | 8h | 8h | 8 | 8 | 8 |
| 135 | 1.8.5 | Marcar el artículo si el mismo está en oferta. Esta información se la obtiene del módulo de ofertas. | 1d | 2016-03-10 A | 2016-03-10 A | 133 | 100% | 2016-02-29 | 2016-03-01 | 2d | 2016-03-10 | 2016-03-10 | RL1 | 8h | 8h | 8 | 16 | 8 |
| 136 | 1.8.6 | Marcar el artículo si el mismo está en próxima oferta, esta información se la obtiene de integración con SIC. | 1d | 2016-03-08 A | 2016-03-08 A | 134 | 100% | 2016-02-29 | 2016-03-01 | 2d | 2016-03-08 | 2016-03-08 | RL3 | 8h | 8h | 8 | 16 | 8 |

| ID | WBS | Task | Duration | Start | Finish | Predecessors | Complete | Baseline 1 start | Baseline 1 finish | Constraint | Resources | Work | Actual work | Cost | Actual cost |
| --- | --- | --- | --- | --- | --- | --- | --- | --- | --- | --- | --- | --- | --- | --- | --- |
| 137 | 1.9 | **Orden de compra** | 8d | 2016-03-01 A | 2016-03-10 A |  | 100% | 2016-03-01 | 2016-03-10 |  |  | 8h | 8h | 8 | 8 |
| 138 | 1.9.1 | Visualización de órdenes de compra desde el B2B | 4d | 2016-03-01 A | 2016-03-04 A |  | 100% | 2016-03-01 | 2016-03-04 | start no earlier than 2016-03-01 | RL2 | 8h | 8h | 8 | 8 |
| 139 | 1.9.2 | Validación y visualización de cambio de precios calendarizados | 2d | 2016-03-04 A | 2016-03-08 A | 138 | 100% | 2016-03-04 | 2016-03-08 |  | RL2 |  |  |  |  |
| 140 | 1.9.3 | Prueba de cambios de precios | 2d | 2016-03-08 A | 2016-03-10 A | 139 | 100% | 2016-03-08 | 2016-03-10 |  | RL2 |  |  |  |  |
| 141 | 1.10 | **Control de cambios - Revisión: 20/05/2016** | 26d | 2016-03-11 A | 2016-04-15 A |  | 100% | 2016-03-11 | 2016-04-15 |  |  | 416h | 416h | 416 | 416 |
| 142 | 1.10.1 | **Orden de compra** | 10d | 2016-03-11 A | 2016-03-24 A |  | 100% | 2016-03-11 | 2016-03-24 |  |  | 152h | 152h | 152 | 152 |
| 143 | 1.10.1.1 | Generar un solo P.O para la creación de notas de pedido. | 3d | 2016-03-11 A | 2016-03-15 A | 135 | 100% | 2016-03-11 | 2016-03-15 |  | RL1 | 24h | 24h | 24 | 24 |
| 144 | 1.10.1.2 | Modificar los reportes de orden de compra para incluir el costo neto en cada artículo y en el total | 5d | 2016-03-11 A | 2016-03-17 A | 140 | 100% | 2016-03-11 | 2016-03-17 |  | RL2 | 40h | 40h | 40 | 40 |
| 145 | 1.10.1.3 | Funcionalidad para crear orden de compra desde SISPE | 3d | 2016-03-16 A | 2016-03-18 A | 143 | 100% | 2016-03-16 | 2016-03-18 |  | RL1 | 24h | 24h | 24 | 24 |
| 146 | 1.10.1.4 | En creación de órdenes de compra por archivo presentar el combo de clases disponibles y validar que los artículos subidos en el archivo pertnezcan a las clases seleccionadas | 2d | 2016-03-18 A | 2016-03-21 A | 144 | 100% | 2016-03-18 | 2016-03-21 |  | RL2 | 16h | 16h | 16 | 16 |
| 147 | 1.10.1.5 | Órdenes de compra y notas de pedido de prueba para proceso de importaciones | 3d | 2016-03-21 A | 2016-03-23 A | 145 | 100% | 2016-03-21 | 2016-03-23 |  | RL1 | 24h | 24h | 24 | 24 |
| 148 | 1.10.1.6 | Verificación cambio del valor del impuesto IVA | 3d | 2016-03-22 A | 2016-03-24 A | 146 | 100% | 2016-03-22 | 2016-03-24 |  | RL2 | 24h | 24h | 24 | 24 |
| 149 | 1.10.2 | **Pedido asistido y por artículo** | 13d | 2016-03-25 A | 2016-04-12 A |  | 100% | 2016-03-25 | 2016-04-12 |  |  | 104h | 104h | 104 | 104 |
| 150 | 1.10.2.1 | Desbloquear artículos con promedio rotación 0 | 1d | 2016-03-25 A | 2016-03-25 A | 148 | 100% | 2016-03-25 | 2016-03-25 |  | RL2 | 8h | 8h | 8 | 8 |
| 151 | 1.10.2.2 | Bloquear artículos sin existencia en el CD | 1d | 2016-03-28 A | 2016-03-28 A | 150 | 100% | 2016-03-28 | 2016-03-28 |  | RL2 | 8h | 8h | 8 | 8 |
| 152 | 1.10.2.3 | Modificar mensaje de sesión caducada | 1d | 2016-03-29 A | 2016-03-29 A | 151 | 100% | 2016-03-29 | 2016-03-29 |  | RL2 | 8h | 8h | 8 | 8 |
| 153 | 1.10.2.4 | Pantalla de carga de artículos en PROMOCIÓN | 10d | 2016-03-30 A | 2016-04-12 A | 152 | 100% | 2016-03-30 | 2016-04-12 |  | RL2 | 80h | 80h | 80 | 80 |
| 154 | 1.10.3 | **Monitoreo** | 7d | 2016-03-24 A | 2016-04-01 A |  | 100% | 2016-03-24 | 2016-04-01 |  |  | 56h | 56h | 56 | 56 |
| 155 | 1.10.3.1 | Presentar cantidad TOPE en pantalla de confirmación por el administrador | 1d | 2016-03-24 A | 2016-03-24 A | 147 | 100% | 2016-03-24 | 2016-03-24 |  | RL1 | 8h | 8h | 8 | 8 |
| 156 | 1.10.3.2 | Editar cantidades pedidas en base a perfiles Jefe de percha y percheros | 3d | 2016-03-25 A | 2016-03-29 A | 155 | 100% | 2016-03-25 | 2016-03-29 |  | RL1 | 24h | 24h | 24 | 24 |
| 157 | 1.10.3.3 | En visualización de los detalles del pedido, el filtro de búsqueda por código de barras de la tabla del listado de artículos debe soportar ingresar el código por scanner | 3d | 2016-03-30 A | 2016-04-01 A | 156 | 100% | 2016-03-30 | 2016-04-01 |  | RL1 | 24h | 24h | 24 | 24 |
| 158 | 1.10.4 | **Calendarización de bodegas** | 5d | 2016-04-04 A | 2016-04-08 A |  | 100% | 2016-04-04 | 2016-04-08 |  |  | 40h | 40h | 40 | 40 |
| 159 | 1.10.4.1 | Los usuarios del perfil de bodega pueden visualizar un botón que les permita copiar las configuraciones a otros locales | 5d | 2016-04-04 A | 2016-04-08 A | 157 | 100% | 2016-04-04 | 2016-04-08 |  | RL1 | 40h | 40h | 40 | 40 |
| 160 | 1.10.5 | **Autorización de usuarios** | 3d | 2016-04-13 A | 2016-04-15 A |  | 100% | 2016-04-13 | 2016-04-15 |  |  | 24h | 24h | 24 | 24 |
| 161 | 1.10.5.1 | Cambiar el reporte de clasificaciones asignadas para que se exporte como EXCEL y no como CSV | 1d | 2016-04-13 A | 2016-04-13 A | 153 | 100% | 2016-04-13 | 2016-04-13 |  | RL2 | 8h | 8h | 8 | 8 |
| 162 | 1.10.5.2 | Cambiar por una lupa el ícono de los filtros de la cabecera de la tabla de asignación de clasificaciones y mantenerlos siempre visibles | 1d | 2016-04-14 A | 2016-04-14 A | 161 | 100% | 2016-04-14 | 2016-04-14 |  | RL2 | 8h | 8h | 8 | 8 |
| 163 | 1.10.5.3 | Modificar filtro de búsqueda de usuarios para controlar si ingresan un nombre y existe un solo resultado ya no se debe presentar el pop up de selección sino que se debe visualizar directamente en el usuario seleccionado. | 1d | 2016-04-15 A | 2016-04-15 A | 162 | 100% | 2016-04-15 | 2016-04-15 |  | RL2 | 8h | 8h | 8 | 8 |

| ID | WBS | Task | Duration | Start | Finish | Predecessors | Complete | Baseline 1 start | Baseline 1 finish | Resources | Work | Actual work | Cost | Actual cost |
| --- | --- | --- | --- | --- | --- | --- | --- | --- | --- | --- | --- | --- | --- | --- |
| 164 | 1.10.6 | **Interfaz** | 5d | 2016-04-11 A | 2016-04-15 A |  | 100% | 2016-04-11 | 2016-04-15 |  | 40h | 40h | 40 | 40 |
| 165 | 1.10.6.1 | Generar orden de compra de pedidos consolidados en interfaz | 3d | 2016-04-11 A | 2016-04-13 A | 159 | 100% | 2016-04-11 | 2016-04-13 | RL1 | 24h | 24h | 24 | 24 |
| 166 | 1.10.6.2 | Cantidad de despacho en artículos a través de inventarios | 2d | 2016-04-14 A | 2016-04-15 A | 165 | 100% | 2016-04-14 | 2016-04-15 | RL1 | 16h | 16h | 16 | 16 |
| 167 | 1.11 | **Control de cambios - Revisión: 20/06/2016** | 17d | 2016-04-18 A | 2016-05-10 A |  | 100% | 2016-04-18 | 2016-05-10 |  | 176h | 176h | 176 | 176 |
| 168 | 1.11.1 | **Orden de compra** | 5d | 2016-04-18 A | 2016-04-22 A |  | 100% | 2016-04-18 | 2016-04-22 |  | 40h | 40h | 40 | 40 |
| 169 | 1.11.1.1 | Aumentar filtro de clases en creación de orden de compra por archivo | 1d | 2016-04-18 A | 2016-04-18 A | 163 | 100% | 2016-04-18 | 2016-04-18 | RL2 | 8h | 8h | 8 | 8 |
| 170 | 1.11.1.2 | En creación de notas de pedido validar tamaño máximo de campos descripción y material a nivel de archivo | 1d | 2016-04-19 A | 2016-04-19 A | 169 | 100% | 2016-04-19 | 2016-04-19 | RL2 | 8h | 8h | 8 | 8 |
| 171 | 1.11.1.3 | En migración de órdenes de compra a SIC verificar que el impuesto disney se envíe solo en órdenes de compra generadas en la recepción de embarques | 1d | 2016-04-20 A | 2016-04-20 A | 170 | 100% | 2016-04-20 | 2016-04-20 | RL2 | 8h | 8h | 8 | 8 |
| 172 | 1.11.1.4 | Soporte a migración de etregas | 2d | 2016-04-21 A | 2016-04-22 A | 171 | 100% | 2016-04-21 | 2016-04-22 | RL2 | 16h | 16h | 16 | 16 |
| 173 | 1.11.2 | **Pedido asistido** | 17d | 2016-04-18 A | 2016-05-10 A |  | 100% | 2016-04-18 | 2016-05-10 |  | 136h | 136h | 136 | 136 |
| 174 | 1.11.2.1 | Pantalla de reporte de clasificaciones no asignadas debe eliminarse el filtro de usuario, la búsqueda debe ser de todos los usuarios | 1d | 2016-04-18 A | 2016-04-18 A | 166 | 100% | 2016-04-18 | 2016-04-18 | RL1 | 8h | 8h | 8 | 8 |
| 175 | 1.11.2.2 | Validar que no se cree un doble pedido si no está creado un pedido normal | 1d | 2016-04-19 A | 2016-04-19 A | 174 | 100% | 2016-04-19 | 2016-04-19 | RL1 | 8h | 8h | 8 | 8 |
| 176 | 1.11.2.3 | Modificar formato del archivo para proceso de interfaz | 2d | 2016-04-20 A | 2016-04-21 A | 175 | 100% | 2016-04-20 | 2016-04-21 | RL1 | 16h | 16h | 16 | 16 |
| 177 | 1.11.2.4 | En pantalla de datos generales del pedido, aumentar filtro para ordenamiento de artículos, y setear por defecto código de barras | 2d | 2016-04-22 A | 2016-04-25 A | 176 | 100% | 2016-04-22 | 2016-04-25 | RL1 | 16h | 16h | 16 | 16 |
| 178 | 1.11.2.5 | En listado de artículos agregar funcionalidad de ordenamiento a las columnas: descripción, nombre y marca | 1d | 2016-04-26 A | 2016-04-26 A | 177 | 100% | 2016-04-26 | 2016-04-26 | RL1 | 8h | 8h | 8 | 8 |
| 179 | 1.11.2.6 | Mover la columna cantidad a la parte fija de la tabla del listado de artículos | 1d | 2016-04-27 A | 2016-04-27 A | 178 | 100% | 2016-04-27 | 2016-04-27 | RL1 | 8h | 8h | 8 | 8 |
| 180 | 1.11.2.7 | Crear el campo genera orden de compra automática en la tabla artículo proceso logístico para indicar si el mismo genera orden de compra | 2d | 2016-04-28 A | 2016-04-29 A | 179 | 100% | 2016-04-28 | 2016-04-29 | RL1 | 16h | 16h | 16 | 16 |
| 181 | 1.11.2.8 | Modificación de estilos y títulos en pedido por artículo y asistido | 1d | 2016-05-02 A | 2016-05-02 A | 180 | 100% | 2016-05-02 | 2016-05-02 | RL1 | 8h | 8h | 8 | 8 |
| 182 | 1.11.2.9 | **Verificación, corrección de estilos y funcionamiento en nuevo scanner de locales** | 4d | 2016-05-03 A | 2016-05-06 A |  | 100% | 2016-05-03 | 2016-05-06 |  | 32h | 32h | 32 | 32 |
| 183 | 1.11.2.9.1 | Pantalla login, datos generales | 1d | 2016-05-03 A | 2016-05-03 A | 181 | 100% | 2016-05-03 | 2016-05-03 | RL1 | 8h | 8h | 8 | 8 |
| 184 | 1.11.2.9.2 | Pantalla listado de pedidos | 1d | 2016-05-04 A | 2016-05-04 A | 183 | 100% | 2016-05-04 | 2016-05-04 | RL1 | 8h | 8h | 8 | 8 |
| 185 | 1.11.2.9.3 | Pantalla ingreso de artículos | 1d | 2016-05-05 A | 2016-05-05 A | 184 | 100% | 2016-05-05 | 2016-05-05 | RL1 | 8h | 8h | 8 | 8 |
| 186 | 1.11.2.9.4 | Pantalla listado de artículos asistida | 1d | 2016-05-06 A | 2016-05-06 A | 185 | 100% | 2016-05-06 | 2016-05-06 | RL1 | 8h | 8h | 8 | 8 |
| 187 | 1.11.2.10 | Soporte a convenio de volúmenes | 2d | 2016-05-09 A | 2016-05-10 A | 186 | 100% | 2016-05-09 | 2016-05-10 | RL1 | 16h | 16h | 16 | 16 |

Notes:
- 181: *Ordenar los bloqueos en la calendarización de bodegas en base a la fecha fin / *Modifiicar ícono de intercambio de clasificaciones / *Título reserva completo.

| ID | WBS | Task | Duration | Start | Finish | Predecessors | Complete | Remaining | Baseline 1 start | Baseline 1 finish | Total slack | Resources | Work | Actual work | Cost | Actual cost |
| --- | --- | --- | --- | --- | --- | --- | --- | --- | --- | --- | --- | --- | --- | --- | --- | --- |
| 188 | 1.12 | **Control de cambios - Bodega almacenamiento: 19/07/2016** | 10d | 2016-05-11 A | 2016-05-24 A |  | 100% |  | 2016-05-11 | 2016-05-24 |  |  | 168h | 168h | 168 | 168 |
| 189 | 1.12.1 | **Pedido asistido** | 10d | 2016-05-11 A | 2016-05-24 A |  | 100% |  | 2016-05-11 | 2016-05-24 |  |  | 168h | 168h | 168 | 168 |
| 190 | 1.12.1.1 | Soporte a FRUVER | 3d | 2016-05-11 A | 2016-05-13 A | 167 | 100% |  | 2016-05-11 | 2016-05-13 |  | RL4 | 24h | 24h | 24 | 24 |
| 191 | 1.12.1.2 | Soporte a migración de etregas | 2d | 2016-05-16 A | 2016-05-17 A | 190 | 100% |  | 2016-05-16 | 2016-05-17 |  | RL4 | 16h | 16h | 16 | 16 |
| 192 | 1.12.1.3 | **MAX-7589 Almacenar bodega en estructura de calendarización** | 6d | 2016-05-11 A | 2016-05-18 A |  | 100% |  | 2016-05-11 | 2016-05-18 |  |  | 48h | 48h | 48 | 48 |
| 193 | 1.12.1.3.1 | MAX-7596 Crear campo bodega en tabla: Proceso configuración | 1d | 2016-05-11 A | 2016-05-11 A | 167 | 100% |  | 2016-05-11 | 2016-05-11 |  | RL1 | 8h | 8h | 8 | 8 |
| 194 | 1.12.1.3.2 | MAX-7597 Modificar consulta de configuración de calendarios | 2d | 2016-05-12 A | 2016-05-13 A | 193 | 100% |  | 2016-05-12 | 2016-05-13 |  | RL1 | 16h | 16h | 16 | 16 |
| 195 | 1.12.1.3.3 | MAX-7598 Modificar consultas de pedido fijo | 1d | 2016-05-16 A | 2016-05-16 A | 194 | 100% |  | 2016-05-16 | 2016-05-16 |  | RL1 | 8h | 8h | 8 | 8 |
| 196 | 1.12.1.3.4 | MAX-7600 Modificar consulta de pedidos en monitoreo | 2d | 2016-05-17 A | 2016-05-18 A | 195 | 100% |  | 2016-05-17 | 2016-05-18 |  | RL1 | 16h | 16h | 16 | 16 |
| 197 | 1.12.1.4 | **MAX-7590 Almacenar bodega en estructura de pedidos** | 8d | 2016-05-11 A | 2016-05-20 A |  | 100% |  | 2016-05-11 | 2016-05-20 |  |  | 64h | 64h | 64 | 64 |
| 198 | 1.12.1.4.1 | MAX-7602 Visualización de listado de bodegas | 2d | 2016-05-11 A | 2016-05-12 A | 167 | 100% |  | 2016-05-11 | 2016-05-12 |  | RL2 | 16h | 16h | 16 | 16 |
| 199 | 1.12.1.4.2 | MAX-7604 Obtener listado de clasificaciones en base a bodega y sub bodega | 3d | 2016-05-13 A | 2016-05-17 A | 198 | 100% |  | 2016-05-13 | 2016-05-17 |  | RL2 | 24h | 24h | 24 | 24 |
| 200 | 1.12.1.4.3 | MAX-7611 Modificación scanner | 3d | 2016-05-18 A | 2016-05-20 A | 199 | 100% |  | 2016-05-18 | 2016-05-20 |  | RL2 | 24h | 24h | 24 | 24 |
| 201 | 1.12.1.5 | **MAX-7591 Generación achivo de interfaz en base a CD, BODEGA Y SUB BODEGA** | 2d | 2016-05-23 A | 2016-05-24 A |  | 100% |  | 2016-05-23 | 2016-05-24 |  |  | 16h | 16h | 16 | 16 |
| 202 | 1.12.1.5.1 | MAX-7613 Modificar archivo de interfaz de pedido | 2d | 2016-05-23 A | 2016-05-24 A | 200 | 100% |  | 2016-05-23 | 2016-05-24 |  | RL2 | 16h | 16h | 16 | 16 |
| 203 | 1.13 | **Control de cambios - Soportes** | 12d | 2016-05-25 A | 2016-06-09 A |  | 100% |  | 2016-05-25 | 2016-06-09 |  |  | 96h | 96h | 96 | 96 |
| 204 | 1.13.1 | No enviar email a órdenes de compra de reemplazo | 2d | 2016-05-25 A | 2016-05-26 A | 188 | 100% |  | 2016-05-25 | 2016-05-26 |  | RL2 | 16h | 16h | 16 | 16 |
| 205 | 1.13.2 | Soporte a RECEPCIÓN | 3d | 2016-05-27 A | 2016-05-31 A | 204 | 100% |  | 2016-05-27 | 2016-05-31 |  | RL2 | 24h | 24h | 24 | 24 |
| 206 | 1.13.3 | Soporte a OFERTAS | 2d | 2016-06-01 A | 2016-06-02 A | 205 | 100% |  | 2016-06-01 | 2016-06-02 |  | RL2 | 16h | 16h | 16 | 16 |
| 207 | 1.13.4 | Soporte a MIGRACIÓN DE ENTREGAS | 3d | 2016-06-03 A | 2016-06-07 A | 206 | 100% |  | 2016-06-03 | 2016-06-07 |  | RL2 | 24h | 24h | 24 | 24 |
| 208 | 1.13.5 | Enviar email de error de duplicidad de claves de acceso | 2d | 2016-06-08 A | 2016-06-09 A | 207 | 100% |  | 2016-06-08 | 2016-06-09 |  | RL2 | 16h | 16h | 16 | 16 |
| 209 | 1.14 | **Control de cambios - Revisión 16/08/2016_19/08/2016** | 13d | 2016-06-10 A | 2016-06-28 |  | 83% | 2.26d | 2016-06-10 | 2016-06-28 | 47d |  | 248h | 204.8h | 248 | 204.8 |
| 210 | 1.14.1 | **Calendarización Bodegas** | 4d | 2016-06-10 A | 2016-06-15 |  | 60% | 1.6d | 2016-06-10 | 2016-06-15 | 56d |  | 72h | 43.2h | 72 | 43.2 |
| 211 | 1.14.1.1 | Modificar búsqueda de configuración | 1d | 2016-06-10 A | 2016-06-10 A | 203 | 100% |  | 2016-06-10 | 2016-06-10 |  | RL2 | 8h | 8h | 8 | 8 |
| 212 | 1.14.1.2 | Opción masiva de bloqueos | 4d | 2016-06-10 A | 2016-06-15 | 203 | 10% | 3.6d | 2016-06-10 | 2016-06-15 | 56d | RL1 | 32h | 3.2h | 32 | 3.2 |
| 213 | 1.14.1.3 | Especificación de bloqueo seleccionado. | 4d | 2016-06-10 A | 2016-06-15 A | 203 | 100% |  | 2016-06-10 | 2016-06-15 |  | RL3 | 32h | 32h | 32 | 32 |

Notes:
- 211: Se tiene las siguientes tareas: / ·Al seleccionar local buscar la configuración/ ·Al cambiar filtros si no ha cambiado nada no poner cartel de advertencia./ ·No validar si el día de recepción es menor al día de despacho.
- 213: Especificar si el bloqueo seleccionado no permite crear el pedido o no permite reservar cantidad. Validar en pedido asistido la especificación de cada bloqueo

| ID | WBS | Task | Duration | Start | Finish | Predecessors | Complete | Remaining | Baseline start | Baseline finish | Baseline duration | Baseline 1 start | Baseline 1 finish | Total slack | Free slack | Resources | Work | Actual work | Cost | Baseline cost | Actual cost |
| --- | --- | --- | --- | --- | --- | --- | --- | --- | --- | --- | --- | --- | --- | --- | --- | --- | --- | --- | --- | --- | --- |
| 214 | 1.14.2 | **Pedido asistido** | 6d | 2016-06-13 A | 2016-06-20 |  | 89% | 0.69d |  |  |  | 2016-06-13 | 2016-06-20 | 53d |  |  | 56h | 49.6h | 56 |  | 49.6 |
| 215 | 1.14.2.1 | Modificación en navegación de creación/selección de pedidos | 2d | 2016-06-13 A | 2016-06-14 A | 211 | 100% |  |  |  |  | 2016-06-13 | 2016-06-14 |  |  | RL2 | 16h | 16h | 16 |  | 16 |
| 216 | 1.14.2.2 | Filtro de artículos en reposición | 1d | 2016-06-15 A | 2016-06-15 | 215 | 20% | 0.8d |  |  |  | 2016-06-15 | 2016-06-15 | 56d |  | RL2 | 8h | 1.6h | 8 |  | 1.6 |
| 217 | 1.14.2.3 | Agregar botón “Actualizar” en pantalla de pedidos.” Refrescar información de clasificaciones y existencias | 3d | 2016-06-16 A | 2016-06-20 A | 213 | 100% |  |  |  |  | 2016-06-16 | 2016-06-20 |  |  | RL3 | 24h | 24h | 24 |  | 24 |
| 218 | 1.14.2.4 | Parametrizar acceso a filtros de artículos | 1d | 2016-06-16 A | 2016-06-16 A | 212 | 100% |  |  |  |  | 2016-06-16 | 2016-06-16 |  |  | RL1 | 8h | 8h | 8 |  | 8 |
| 219 | 1.14.3 | **Monitoreo** | 5d | 2016-06-16 A | 2016-06-22 A |  | 100% |  |  |  |  | 2016-06-16 | 2016-06-22 |  |  |  | 72h | 72h | 72 |  | 72 |
| 220 | 1.14.3.1 | El administrador si puede modificar las cantidades pedidas de TODOS los usuarios del local. | 2d | 2016-06-16 A | 2016-06-17 A | 216 | 100% |  |  |  |  | 2016-06-16 | 2016-06-17 |  |  | RL2 | 16h | 16h | 16 |  | 16 |
| 221 | 1.14.3.2 | Si el administrador no pide en su columna de pedido, eliminar el pedido | 1d | 2016-06-17 A | 2016-06-17 A | 218 | 100% |  |  |  |  | 2016-06-17 | 2016-06-17 |  |  | RL1 | 8h | 8h | 8 |  | 8 |
| 222 | 1.14.3.3 | Modificar columnas: cantidades | 1d | 2016-06-20 A | 2016-06-20 A | 220 | 100% |  |  |  |  | 2016-06-20 | 2016-06-20 |  |  | RL2 | 8h | 8h | 8 |  | 8 |
| 223 | 1.14.3.4 | Todos los usuarios que tienen opción para pedir pueden entrar al monitoreo, a ver y eliminar su pedido. | 3d | 2016-06-20 A | 2016-06-22 A | 221 | 100% |  |  |  |  | 2016-06-20 | 2016-06-22 |  |  | RL1 | 24h | 24h | 24 |  | 24 |
| 224 | 1.14.3.5 | Modificar separador de pedidos para distinguir mejor entre cada uno. | 1d | 2016-06-21 A | 2016-06-21 A | 217 | 100% |  |  |  |  | 2016-06-21 | 2016-06-21 |  |  | RL3 | 8h | 8h | 8 |  | 8 |
| 225 | 1.14.3.6 | Salga seleccionado el primer pedido por defecto al confirmar por administrador. | 1d | 2016-06-21 A | 2016-06-21 A | 222 | 100% |  |  |  |  | 2016-06-21 | 2016-06-21 |  |  | RL2 | 8h | 8h | 8 |  | 8 |
| 226 | 1.14.4 | **Autorización de usuarios** | 1d | 2016-06-22 A | 2016-06-22 A |  | 100% |  |  |  |  | 2016-06-22 | 2016-06-22 |  |  |  | 8h | 8h | 8 |  | 8 |
| 227 | 1.14.4.1 | Validar que no se asigne una clasificación si tiene artículos asignados en la misma. Presentar mensaje de error. | 1d | 2016-06-22 A | 2016-06-22 A | 224 | 100% |  |  |  |  | 2016-06-22 | 2016-06-22 |  |  | RL3 | 8h | 8h | 8 |  | 8 |
| 228 | 1.14.5 | **INTERFAZ** | 4d | 2016-06-22 A | 2016-06-27 A |  | 100% |  |  |  |  | 2016-06-22 | 2016-06-27 |  |  |  | 32h | 32h | 32 |  | 32 |
| 229 | 1.14.5.1 | Si se escoge el CD, que el foco se vaya a la bodega y luego a la sub bodega | 1d | 2016-06-22 A | 2016-06-22 A | 225 | 100% |  |  |  |  | 2016-06-22 | 2016-06-22 |  |  | RL2 | 8h | 8h | 8 |  | 8 |
| 230 | 1.14.5.2 | Selección de tipos de pedido en base a local seleccionado | 3d | 2016-06-23 A | 2016-06-27 A | 223 | 100% |  |  |  |  | 2016-06-23 | 2016-06-27 |  |  | RL1 | 24h | 24h | 24 |  | 24 |
| 231 | 1.14.6 | Revisión con funcionario | 1d | 2016-06-28 | 2016-06-28 | 228 |  |  |  |  |  | 2016-06-28 | 2016-06-28 | 47d |  | RL1 | 8h |  | 8 |  |  |
| 232 | 2 | **Pedido asistido - paso a producción** | 33d | 2016-06-29 A | 2016-08-12 |  | 62% | 12.38d | 2016-03-02 | 2016-04-20 | 36d | 2016-06-29 | 2016-08-12 | 14d |  |  | 416h | 314.72h | 416 | 120 | 314.72 |
| 233 | 2.1 | **Validación de control de calidad** | 18d | 2016-06-29 A | 2016-07-22 |  | 98% | 0.28d | 2016-03-02 | 2016-03-25 | 18d | 2016-06-29 | 2016-07-22 | 16.9d | 0d |  | 296h | 291.52h | 296 |  | 291.52 |
| 234 | 2.1.1 | Revisar la acción hora de confirmación en monitoreo de pedido asistido | 1d | 2016-06-29 A | 2016-06-29 A | 1 | 100% |  | 2016-03-02 | 2016-03-25 | 18d | 2016-06-29 | 2016-06-29 |  |  | RL3; RL2; RL1 | 24h | 24h | 24 |  | 24 |
| 235 | 2.1.2 | Revisar el comportamiento del foco cuando se navega con las teclas en la tabla de listados de artículos | 1d | 2016-06-30 A | 2016-06-30 A | 234 | 100% |  |  |  |  | 2016-06-30 | 2016-06-30 |  |  | RL3 | 8h | 8h | 8 |  | 8 |
| 236 | 2.1.3 | Revisar el componente input de los paginadores de las tablas | 1d | 2016-07-01 A | 2016-07-01 A | 235 | 100% |  |  |  |  | 2016-07-01 | 2016-07-01 |  |  | RL2 | 8h | 8h | 8 |  | 8 |
| 237 | 2.1.4 | Revisar la acción corregido en monitoreo de pedido asistido | 1d | 2016-07-04 A | 2016-07-04 A | 236 | 100% |  |  |  |  | 2016-07-04 | 2016-07-04 |  |  | RL1 | 8h | 8h | 8 |  | 8 |
| 238 | 2.1.5 | Revisar flujo | 14d | 2016-07-05 A | 2016-07-22 | 237 | 98% | 0.28d |  |  |  | 2016-07-05 | 2016-07-22 | 16.9d |  | RL3; RL2; RL1 | 248h | 243.52h | 248 |  | 243.52 |
| 239 | 2.2 | Pruebas funcionales de sistema | 4d | 2016-07-25 A | 2016-07-28 | 233 | 60% | 1.6d | 2016-03-28 | 2016-04-04 | 3d | 2016-07-25 | 2016-07-28 | 14.5d | 0d | RL4 | 32h | 19.2h | 32 | 24 | 19.2 |
| 240 | 2.3 | Preparación de scripts y ejecución de migraciones de datos iniciales en producción | 1d | 2016-07-29 A | 2016-07-29 | 239 | 50% | 0.5d | 2016-04-05 | 2016-04-05 | 1d | 2016-07-29 | 2016-07-29 | 14d | 0d | RL4 | 8h | 4h | 8 | 8 | 4 |
| 241 | 2.4 | Instalación aplicación | 1d | 2016-08-01 | 2016-08-01 | 240 |  |  | 2016-04-06 | 2016-04-07 | 2d | 2016-08-01 | 2016-08-01 | 14d | 0d | RL4 | 8h |  | 8 | 16 |  |

Notes:
- 215: ·Volver a consultar la configuración al dar click en botón Asistido o por Articulo/ ·Validar si ya existe un Pedido Normal abierto al seleccionar la opción para crearlo./ ·En pop up de selección/creación de pedido marcar solo la fila de la opción seleccionada./ ·Al confirmar por asistido validar antes de mostrar mensaje de confirmación. Si no cumple la validación no presentar mensaje de confirmación.
- 218: ·Filtros de artículo solo para usuario administrador/ ·Eliminar validación de existencia para artículos de pedido FIJO/ ·Si el artículo no se visualiza, se debe presentar el mensaje si es por la existencia o por las restricciones generales del pedido
- 230: ·Si selecciona un local que se visualice los tipos de pedidos creados en el mismo. Si no selecciono local que se visualice todos los pedidos creados en todos los locales

| ID | WBS | Task | Duration | Start | Finish | Predecessors | Complete | Remaining | Baseline start | Baseline finish | Baseline duration | Baseline 1 start | Baseline 1 finish | Total slack | Free slack | Resources | Work | Actual work | Cost | Baseline cost | Actual cost |
| --- | --- | --- | --- | --- | --- | --- | --- | --- | --- | --- | --- | --- | --- | --- | --- | --- | --- | --- | --- | --- | --- |
| 242 | 2.5 | **Acompañamiento** | 9d | 2016-08-02 | 2016-08-12 |  |  |  | 2016-04-08 | 2016-04-20 | 9d | 2016-08-02 | 2016-08-12 | 14d |  |  | 72h |  | 72 | 72 |  |
| 243 | 2.5.1 | Piloto controlado | 4d | 2016-08-02 | 2016-08-05 | 241 |  |  | 2016-04-08 | 2016-04-13 | 4d | 2016-08-02 | 2016-08-05 | 14d | 0d | RL4 | 32h |  | 32 | 32 |  |
| 244 | 2.5.2 | Soporte a usuarios finales | 5d | 2016-08-08 | 2016-08-12 | 243 |  |  | 2016-04-14 | 2016-04-20 | 5d | 2016-08-08 | 2016-08-12 | 14d |  | RL4 | 40h |  | 40 | 40 |  |
| 245 | 3 | **Control de cambios orden de compra 04/06/16** | 4d | 2016-08-15 A | 2016-08-18 A |  | 100% |  |  |  |  | 2016-08-15 | 2016-08-18 |  |  |  | 72h | 72h | 72 |  | 72 |
| 246 | 3.1 | **MAX-7243 - Guardar el estado actual de la orden de compra** | 2d | 2016-08-15 A | 2016-08-16 A |  | 100% |  |  |  |  | 2016-08-15 | 2016-08-16 |  |  |  | 48h | 48h | 48 |  | 48 |
| 247 | 3.1.1 | MAX-7244 Crear un catálago valor en la tabla SCORCTORDCOMEST/ MAX-7245 Registrar estado actual en creación de orden de compra /MAX-7246 Actualizar el campo estado actual al editar | 1d | 2016-08-15 A | 2016-08-15 A | 232 | 100% |  |  |  |  | 2016-08-15 | 2016-08-15 |  |  | RL1 | 8h | 8h | 8 |  | 8 |
| 248 | 3.1.2 | MAX-7247 Actualizar estado actual cuando se generan nuevos estados de la orden de compra / MAX-7248-Actualizar el estado actual de la orden de compra en anulación | 1d | 2016-08-15 A | 2016-08-15 A | 232 | 100% |  |  |  |  | 2016-08-15 | 2016-08-15 |  |  | RL2 | 8h | 8h | 8 |  | 8 |
| 249 | 3.1.3 | MAX-7271 - Registrar estado actual de orden de compra en migración B2B /MAX-7249 Modificar la creación de ordenes de compra pendientes / MAX-7250 Modificar la migración con el SIC / MAX-7251 Modificar consultas que utilizan los estados anteriores | 1d | 2016-08-15 A | 2016-08-15 A | 232 | 100% |  |  |  |  | 2016-08-15 | 2016-08-15 |  |  | RL4 | 8h | 8h | 8 |  | 8 |
| 250 | 3.1.4 | MAX-7252 - Pruebas creación de orden de compra / MAX-7257 - Pruebas creación de ordenes de compra pendientes por entregar | 1d | 2016-08-16 A | 2016-08-16 A | 247 | 100% |  |  |  |  | 2016-08-16 | 2016-08-16 |  |  | RL1 | 8h | 8h | 8 |  | 8 |
| 251 | 3.1.5 | MAX-7253 - Pruebas flujo de juguetes | 1d | 2016-08-16 A | 2016-08-16 A | 248 | 100% |  |  |  |  | 2016-08-16 | 2016-08-16 |  |  | RL2 | 8h | 8h | 8 |  | 8 |
| 252 | 3.1.6 | MAX-7255 - Pruebas migración de órdenes de compra al SIC / MAX-7254 Pruebas en la migración de órdenes de compra desde el B2B. | 1d | 2016-08-16 A | 2016-08-16 A | 249 | 100% |  |  |  |  | 2016-08-16 | 2016-08-16 |  |  | RL4 | 8h | 8h | 8 |  | 8 |
| 253 | 3.2 | **MAX-7259 - No registrar los detalles en los estados CANCELADO y CERRADO de la orden de compra** | 2d | 2016-08-17 A | 2016-08-18 A |  | 100% |  |  |  |  | 2016-08-17 | 2016-08-18 |  |  |  | 24h | 24h | 24 |  | 24 |
| 254 | 3.2.1 | MAX-7261 - Modificar método de cierre de orden de compra - MAX-7262 - Modificar método de consulta de pedidos B2B - MAX-7263 - Modificar la visualización de los detalles de la orden de compra | 2d | 2016-08-17 A | 2016-08-18 A | 250 | 100% |  |  |  |  | 2016-08-17 | 2016-08-18 |  |  | RL1 | 16h | 16h | 16 |  | 16 |
| 255 | 3.2.2 | MAX-7260 - Modificar método de anulación de orden de compra. - MAX-7264 - Modificar navegación del popUp de estados de la orden de compra / MAX-7265 - Pruebas generales | 1d | 2016-08-17 A | 2016-08-17 A | 251 | 100% |  |  |  |  | 2016-08-17 | 2016-08-17 |  |  | RL2 | 8h | 8h | 8 |  | 8 |
| 256 | 4 | **Control de cambios - Bodega almacenamiento orden compra: 19/07/2016** | 10d | 2016-08-19 A | 2016-09-01 |  | 54% | 4.57d |  |  |  | 2016-08-19 | 2016-09-01 | 0d |  |  | 112h | 60.8h | 112 |  | 60.8 |
| 257 | 4.1 | **MAX-7592 Dividir orden de compra por alcance a la bodega** | 6d | 2016-08-19 A | 2016-08-26 A |  | 100% |  |  |  |  | 2016-08-19 | 2016-08-26 |  |  |  | 48h | 48h | 48 |  | 48 |
| 258 | 4.1.1 | MAX-7614 Dividir por alcance a la bodega órdenes de compra creadas para cd y oficina | 3d | 2016-08-19 A | 2016-08-23 A | 245 | 100% |  |  |  |  | 2016-08-19 | 2016-08-23 |  |  | RL1 | 24h | 24h | 24 |  | 24 |
| 259 | 4.1.2 | MAX-7615 Dividir por alcance a la bodega órdenes de compra creadas para local y bodega | 1d | 2016-08-24 A | 2016-08-24 A | 258 | 100% |  |  |  |  | 2016-08-24 | 2016-08-24 |  |  | RL1 | 8h | 8h | 8 |  | 8 |
| 260 | 4.1.3 | MAX-7616 Visualización de órdenes de compra de locales, oficina y bodegas | 2d | 2016-08-25 A | 2016-08-26 A | 259 | 100% |  |  |  |  | 2016-08-25 | 2016-08-26 |  |  | RL1 | 16h | 16h | 16 |  | 16 |
| 261 | 4.2 | **MAX-7593 Bodega en migración de entregas** | 4d | 2016-08-29 A | 2016-09-01 |  | 20% | 3.2d |  |  |  | 2016-08-29 | 2016-09-01 | 0d |  |  | 32h | 6.4h | 32 |  | 6.4 |
| 262 | 4.2.1 | MAX-7632 Modificar bodega en migración de entregas | 4d | 2016-08-29 A | 2016-09-01 | 257 | 20% | 3.2d |  |  |  | 2016-08-29 | 2016-09-01 | 0d |  | RL4 | 32h | 6.4h | 32 |  | 6.4 |
| 263 | 4.3 | **MAX-7594 Bodega en migración de pedidos del B2B al MAX** | 4d | 2016-08-29 A | 2016-09-01 |  | 20% | 3.2d |  |  |  | 2016-08-29 | 2016-09-01 | 0d |  |  | 32h | 6.4h | 32 |  | 6.4 |
| 264 | 4.3.1 | MAX-7633 Modificar bodega en migración de pedidos del B2B al MAX | 4d | 2016-08-29 A | 2016-09-01 | 257 | 20% | 3.2d |  |  |  | 2016-08-29 | 2016-09-01 | 0d |  | RL3 | 32h | 6.4h | 32 |  | 6.4 |
