# FLUX 2017

Schedule from MS Project, 2017-01-03 to 2017-12-29, status date 2017-02-24, costs in $, A marks actual dates.

## Calendars

- Standard: Mon-Fri 08:00-12:00, 13:00-17:00; Sat-Sun off. Exceptions (off unless hours are given): 2017-02-26 to 2017-02-28 (Carnaval), 2017-04-14 to 2017-04-16 (Viernes Santo), 2017-05-01 (Dia del Trabajo), 2017-05-26 to 2017-05-28 (Batalla Pichincha), 2017-08-11 to 2017-08-13 (Primer grito), 2017-10-09 (Independencia Guayaquil), 2017-11-02 to 2017-11-05 (Difuntos), 2017-12-23 to 2017-12-25 (Navidad).

## Resources

| Resource | Rate |
| --- | --- |
| R1 | 1 |
| R2 | 1 |
| R3 | 1 |
| R4 | 1 |
| R5 | 1 |

## Schedule

| ID | WBS | Task | Duration | Start | Finish | Predecessors | Complete | Remaining | Baseline start | Baseline finish | Baseline duration | Total slack | Constraint | Resources | Work | Actual work | Cost | Baseline cost | Actual cost | Text1 |
| --- | --- | --- | --- | --- | --- | --- | --- | --- | --- | --- | --- | --- | --- | --- | --- | --- | --- | --- | --- | --- |
| 1 | 1 | **Monitor de Flujos** | 10d | 2017-01-03 A | 2017-01-16 A |  | 100% |  | 2017-01-03 | 2017-01-16 | 10d |  |  |  | 470.4h | 470.4h | 470.4 | 470.4 | 470.4 | mar 3/1/17 |
| 2 | 1.1 | Sprint 1 | 10d | 2017-01-03 A | 2017-01-16 A |  | 100% |  | 2017-01-03 | 2017-01-16 | 10d |  | start no earlier than 2017-01-03 | R1; R2; R4; R5; R3 | 470.4h | 470.4h | 470.4 | 470.4 | 470.4 | lun 16/1/17 |
| 3 | 1.2 | PasoProduccion | 1d | 2017-01-13 A | 2017-01-13 A |  | 100% |  | 2017-01-13 | 2017-01-13 | 1d |  | start no earlier than 2017-01-13 |  |  |  |  |  |  | vie 13/1/17 |
| 4 | 2 | **Salida toda la corporación (Buzon Elastic, Historial Resumido, Mejoras, Soporte)** | 60d | 2017-01-17 A | 2017-04-12 |  | 53% | 28.1d | 2017-01-17 | 2017-04-12 | 60d | 179d |  |  | 2320h | 1220h | 2,320 | 2,320 | 1,220 | mié 11/5/16 |
| 5 | 2.1 | Sprint 2 | 10d | 2017-01-17 A | 2017-01-30 A | 2 | 100% |  | 2017-01-17 | 2017-01-30 | 10d |  | start no earlier than 2017-01-17 | R2; R4; R5; R3; R1 | 320h | 320h | 320 | 320 | 320 | lun 30/1/17 |
| 6 | 2.2 | Sprint 3 | 10d | 2017-01-31 A | 2017-02-13 A | 5 | 100% |  | 2017-01-31 | 2017-02-13 | 10d |  | start no earlier than 2017-01-31 | R1; R2; R4; R5; R3 | 400h | 400h | 400 | 400 | 400 | lun 13/2/17 |
| 7 | 2.3 | PasoProduccion | 1d | 2017-02-13 A | 2017-02-13 A |  | 100% |  | 2017-02-13 | 2017-02-13 | 1d |  | start no earlier than 2017-02-13 |  |  |  |  |  |  | lun 13/2/17 |
| 8 | 2.4 | Sprint 4 | 10d | 2017-02-14 A | 2017-03-01 A | 6 | 100% |  | 2017-02-14 | 2017-03-01 | 10d |  | start no earlier than 2017-02-14 | R1; R2; R4; R5; R3 | 400h | 400h | 400 | 400 | 400 | mié 1/3/17 |
| 9 | 2.5 | Sprint 5 | 10d | 2017-03-02 A | 2017-03-15 | 8 | 25% | 7.5d | 2017-03-02 | 2017-03-15 | 10d | 0d |  | R3; R1; R2; R4; R5 | 400h | 100h | 400 | 400 | 100 | mié 15/3/17 |
| 10 | 2.6 | PasoProduccion | 1d | 2017-03-15 | 2017-03-15 |  |  |  | 2017-03-15 | 2017-03-15 | 1d | 199d | start no earlier than 2017-03-15 |  |  |  |  |  |  | mié 15/3/17 |
| 11 | 2.7 | Sprint 6 | 10d | 2017-03-16 | 2017-03-29 | 9 |  |  | 2017-03-16 | 2017-03-29 | 10d | 0d | start no earlier than 2017-02-14 | R1; R2; R4; R5; R3 | 400h |  | 400 | 400 |  | mié 29/3/17 |
| 12 | 2.8 | Sprint 7 | 10d | 2017-03-30 | 2017-04-12 | 11 |  |  | 2017-03-30 | 2017-04-12 | 10d | 0d |  | R3; R1; R2; R4; R5 | 400h |  | 400 | 400 |  | mié 12/4/17 |
| 13 | 2.9 | PasoProduccion | 1d | 2017-04-12 | 2017-04-12 |  |  |  | 2017-04-12 | 2017-04-12 | 1d | 179d | start no earlier than 2017-04-12 |  |  |  |  |  |  | mié 12/4/17 |
| 14 | 3 | **Calificaciones** | 30d | 2017-04-13 | 2017-05-29 |  |  |  | 2017-04-13 | 2017-05-29 | 30d | 0d |  |  | 1040h |  | 1,040 | 1,040 |  | mar 1/3/16 |
| 15 | 3.1 | Sprint 8 | 10d | 2017-04-13 | 2017-04-27 | 12 |  |  | 2017-04-13 | 2017-04-27 | 10d | 0d |  | R1; R2; R3; R4; R5 | 400h |  | 400 | 400 |  | jue 27/4/17 |
| 16 | 3.2 | Sprint 9 | 10d | 2017-04-28 | 2017-05-12 | 15 |  |  | 2017-04-28 | 2017-05-12 | 10d | 0d |  | R1; R2; R3; R4 | 320h |  | 320 | 320 |  | vie 12/5/17 |
| 17 | 3.3 | Sprint 10 | 10d | 2017-05-15 | 2017-05-29 | 16 |  |  | 2017-05-15 | 2017-05-29 | 10d | 0d |  | R1; R2; R3; R4 | 320h |  | 320 | 320 |  | lun 29/5/17 |
| 18 | 3.4 | PasoProduccion | 1d | 2017-05-29 | 2017-05-29 |  |  |  | 2017-05-29 | 2017-05-29 | 1d | 149d | start no earlier than 2017-05-29 |  |  |  |  |  |  | lun 29/5/17 |
| 19 | 4 | **Consultas Rapidas (Elastic)** | 40d | 2017-05-30 | 2017-07-24 |  |  |  | 2017-05-30 | 2017-07-24 | 40d | 0d |  |  | 1280h |  | 1,280 | 1,280 |  | mar 1/3/16 |
| 20 | 4.1 | Sprint 11 | 10d | 2017-05-30 | 2017-06-12 | 17 |  |  | 2017-05-30 | 2017-06-12 | 10d | 0d | start no earlier than 2017-05-30 | R1; R2; R4; R3 | 320h |  | 320 | 320 |  | lun 12/6/17 |
| 21 | 4.2 | Sprint 12 | 10d | 2017-06-13 | 2017-06-26 | 20 |  |  | 2017-06-13 | 2017-06-26 | 10d | 0d |  | R3; R1; R2; R4 | 320h |  | 320 | 320 |  | lun 26/6/17 |
| 22 | 4.3 | PasoProduccion | 1d | 2017-06-26 | 2017-06-26 |  |  |  | 2017-06-26 | 2017-06-26 | 1d | 129d | start no earlier than 2017-06-26 |  |  |  |  |  |  | lun 26/6/17 |
| 23 | 4.4 | Sprint 13 | 10d | 2017-06-27 | 2017-07-10 | 21 |  |  | 2017-06-27 | 2017-07-10 | 10d | 0d | start no earlier than 2017-06-27 | R1; R2; R4; R3 | 320h |  | 320 | 320 |  | lun 10/7/17 |
| 24 | 4.5 | Sprint 14 | 10d | 2017-07-11 | 2017-07-24 | 23 |  |  | 2017-07-11 | 2017-07-24 | 10d | 0d |  | R3; R1; R2; R4 | 320h |  | 320 | 320 |  | lun 24/7/17 |
| 25 | 4.6 | PasoProduccion | 1d | 2017-07-24 | 2017-07-24 |  |  |  | 2017-07-24 | 2017-07-24 | 1d | 109d | start no earlier than 2017-07-24 |  |  |  |  |  |  | lun 24/7/17 |

| ID | WBS | Task | Duration | Start | Finish | Predecessors | Baseline start | Baseline finish | Baseline duration | Total slack | Constraint | Resources | Work | Cost | Baseline cost | Text1 |
| --- | --- | --- | --- | --- | --- | --- | --- | --- | --- | --- | --- | --- | --- | --- | --- | --- |
| 26 | 5 | **Comentarios** | 20d | 2017-07-25 | 2017-08-22 |  | 2017-07-25 | 2017-08-22 | 20d | 0d |  |  | 640h | 640 | 640 | mar 1/3/16 |
| 27 | 5.1 | Sprint 15 | 10d | 2017-07-25 | 2017-08-07 | 24 | 2017-07-25 | 2017-08-07 | 10d | 0d | start no earlier than 2017-07-25 | R1; R2; R4; R3 | 320h | 320 | 320 | lun 7/8/17 |
| 28 | 5.2 | Sprint 16 | 10d | 2017-08-08 | 2017-08-22 | 27 | 2017-08-08 | 2017-08-22 | 10d | 0d |  | R3; R1; R2; R4 | 320h | 320 | 320 | mar 22/8/17 |
| 29 | 5.3 | PasoProduccion | 1d | 2017-08-22 | 2017-08-22 |  | 2017-08-22 | 2017-08-22 | 1d | 89d | start no earlier than 2017-08-22 |  |  |  |  | mar 22/8/17 |
| 30 | 6 | **Carpetas** | 20d | 2017-08-23 | 2017-09-19 |  | 2017-08-23 | 2017-09-19 | 20d | 0d |  |  | 480h | 480 | 480 | mar 1/3/16 |
| 31 | 6.1 | Sprint 17 | 10d | 2017-08-23 | 2017-09-05 | 28 | 2017-08-23 | 2017-09-05 | 10d | 0d | start no earlier than 2017-08-23 | R1; R2; R3 | 240h | 240 | 240 | mar 5/9/17 |
| 32 | 6.2 | Sprint 18 | 10d | 2017-09-06 | 2017-09-19 | 31 | 2017-09-06 | 2017-09-19 | 10d | 0d |  | R1; R2; R3 | 240h | 240 | 240 | mar 19/9/17 |
| 33 | 6.3 | PasoProduccion | 1d | 2017-09-19 | 2017-09-19 |  | 2017-09-19 | 2017-09-19 | 1d | 69d | start no earlier than 2017-09-19 |  |  |  |  | mar 19/9/17 |
| 34 | 7 | **Cambio de contraseña en FLUX** | 10d | 2017-09-20 | 2017-10-03 |  | 2017-09-20 | 2017-10-03 | 10d | 0d |  |  | 240h | 240 | 240 | mar 1/3/16 |
| 35 | 7.1 | Sprint 20 | 10d | 2017-09-20 | 2017-10-03 | 32 | 2017-09-20 | 2017-10-03 | 10d | 0d |  | R1; R2; R3 | 240h | 240 | 240 | mar 3/10/17 |
| 36 | 7.2 | PasoProduccion | 1d | 2017-10-03 | 2017-10-03 |  | 2017-10-03 | 2017-10-03 | 1d | 59d | start no earlier than 2017-10-03 |  |  |  |  | mar 3/10/17 |
| 37 | 8 | Reserva de Contingencia | 59d | 2017-10-04 | 2017-12-29 | 35 | 2017-10-04 | 2017-12-29 | 59d | 0d |  | R1; R2; R3 | 1416h | 1,416 | 1,416 | vie 29/12/17 |
